# 项目WBS

Schedule from MS Project, 2007-10-30 to 2008-01-30.
www.ftpdown.com

## Calendars

- 标准: Mon-Fri 08:30-12:00, 13:00-17:30; Sat-Sun off.

## Resources

| Resource |
| --- |
| TDT-项目经理 |
| TDT-技术负责人 |
| TDT-市场 |
| TDT-财务 |
| TDT-测试 |
| TDT-CM人员 |
| TDT-电路 |
| TDT-结构 |
| TDT-软件 |
| TDT-PPQA工程师 |
| TDT-采购 |
| TDT-系统工程师 |
| TDT-编码 |
| LMT-经理 |
| LMT-财务 |
| LMT-市场 |
| LMT-技术 |

## Schedule

| ID | WBS | Task | Duration | Start | Finish | Predecessors | Total slack | Free slack | Resources | Work |
| --- | --- | --- | --- | --- | --- | --- | --- | --- | --- | --- |
| 1 | 1 | **需求阶段** | 13.42d? | 2007-10-30 | 2007-11-16 |  | 52.91d |  |  | 424h |
| 2 | 1.1 | **项目启动** | 8.59d? | 2007-10-30 | 2007-11-09 |  | 52.91d |  |  | 80h |
| 3 | 1.1.1 | 确认《项目任务书》内容 | 1d? | 2007-10-30 | 2007-10-30 |  | 52.91d | 0d | TDT-项目经理 | 8h |
| 4 | 1.1.2 | **组建初步的项目团队** | 4d? | 2007-10-31 | 2007-11-05 |  | 52.91d |  |  | 32h |
| 5 | 1.1.2.1 | 选择确定项目团队核心成员 | 1d? | 2007-10-31 | 2007-10-31 | 3 | 52.91d | 0d | TDT-项目经理 | 8h |
| 6 | 1.1.2.2 | 向团队核心成员解释项目任务书内容 | 1d? | 2007-11-01 | 2007-11-01 | 5 | 52.91d | 0d | TDT-项目经理 | 8h |
| 7 | 1.1.2.3 | 确定项目团队核心成员角色和职责 | 1d? | 2007-11-02 | 2007-11-02 | 6 | 52.91d | 0d | TDT-项目经理 | 8h |
| 8 | 1.1.2.4 | 制定醒目项目运作规则和沟通计划 | 1d? | 2007-11-05 | 2007-11-05 | 7 | 52.91d | 0d | TDT-项目经理 | 8h |
| 9 | 1.1.3 | 编制项目裁剪申请表 | 1d? | 2007-11-06 | 2007-11-06 | 8 | 52.91d | 0d | TDT-项目经理 | 8h |
| 10 | 1.1.4 | 召开项目启动会 | 0.09d? | 2007-11-07 | 2007-11-07 | 9 | 52.91d | 0d | TDT-项目经理; TDT-技术负责人; TDT-市场; TDT-财务; TDT-测试; TDT-CM人员; TDT-电路; TDT-结构; TDT-软件; TDT-PPQA工程师; TDT-采购 | 8h |
| 11 | 1.1.5 | 确定项目里程碑及更新WBS | 0.5d? | 2007-11-07 | 2007-11-07 | 10 | 52.91d | 0d | TDT-项目经理; TDT-技术负责人 | 8h |
| 12 | 1.1.6 | 制定初步的《配置管理计划》 | 1d? | 2007-11-07 | 2007-11-08 | 11 | 52.91d | 0d | TDT-CM人员 | 8h |
| 13 | 1.1.7 | 制定初步的《MA计划》 | 1d? | 2007-11-08 | 2007-11-09 | 12 | 52.91d | 0d | TDT-项目经理 | 8h |
| 14 | 1.2 | **调查分析并确定需求** | 13.42d? | 2007-10-30 | 2007-11-16 |  | 52.91d |  |  | 112h |
| 15 | 1.2.1 | 制定《用户需求规格书》 | 1d? | 2007-11-09 | 2007-11-12 | 13 | 52.91d | 0d | TDT-市场 | 8h |
| 16 | 1.2.2 | 评审《用户需求规格书》 | 0.75d? | 2007-11-12 | 2007-11-13 | 15 | 52.91d | 0d | TDT-项目经理; TDT-技术负责人; TDT-市场; TDT-系统工程师 | 24h |
| 17 | 1.2.3 | 编写《产品需求规格说明书》 | 1d? | 2007-11-13 | 2007-11-14 | 16 | 52.91d | 0d | TDT-技术负责人 | 8h |
| 18 | 1.2.4 | 评审《产品需求规格说明书》 | 0.75d? | 2007-11-14 | 2007-11-15 | 17 | 52.91d | 0d | TDT-项目经理; TDT-技术负责人; TDT-市场; TDT-系统工程师 | 24h |
| 19 | 1.2.5 | 编写初步的《系统测试用例》 | 1d? | 2007-11-15 | 2007-11-16 | 18 | 52.91d | 0d | TDT-测试 | 8h |
| 20 | 1.2.6 | 评审《系统测试用例》 | 0.33d? | 2007-11-16 | 2007-11-16 | 19 | 52.91d |  | TDT-技术负责人; TDT-测试; TDT-系统工程师 | 8h |
| 21 | 1.2.7 | 确定技术方案 | 1d? | 2007-10-30 | 2007-10-30 |  | 65.33d |  |  |  |
| 22 | 1.2.8 | 制定DAR计划及报告 | 1d? | 2007-10-30 | 2007-10-30 |  | 64.33d | 0d | TDT-技术负责人; TDT-系统工程师 | 16h |
| 23 | 1.2.9 | 制定DAR评价表 | 1d? | 2007-10-31 | 2007-10-31 | 22 | 64.33d |  | TDT-技术负责人; TDT-系统工程师 | 16h |
| 24 | 1.3 | **制定初步的项目计划** | 7.03d? | 2007-10-30 | 2007-11-08 |  | 57d |  |  | 144h |
| 25 | 1.3.1 | 制定《项目相关人员参与表》 | 0.33d? | 2007-10-30 | 2007-10-30 |  | 59.3d | 0d | TDT-项目经理; TDT-技术负责人; TDT-系统工程师 | 8h |
| 26 | 1.3.2 | 估计项目规模 | 1d? | 2007-10-30 | 2007-10-31 | 25 | 59.3d | 0d | TDT-项目经理; TDT-技术负责人; TDT-系统工程师 | 24h |
| 27 | 1.3.3 | 估计项目工作量 | 1d? | 2007-10-31 | 2007-11-01 | 26 | 59.3d | 0d | TDT-项目经理; TDT-技术负责人; TDT-系统工程师 | 24h |
| 28 | 1.3.4 | 分析资源并制定软硬件资源估计记录表 | 1d? | 2007-11-01 | 2007-11-02 | 27 | 59.3d | 0d | TDT-项目经理; TDT-技术负责人; TDT-系统工程师 | 24h |
| 29 | 1.3.5 | 更新《沟通计划》 | 1d? | 2007-11-02 | 2007-11-05 | 28 | 59.3d | 0d | TDT-项目经理 | 8h |
| 30 | 1.3.6 | 更新WBS | 1d? | 2007-11-05 | 2007-11-06 | 29 | 59.3d | 0d | TDT-项目经理 | 8h |
| 31 | 1.3.7 | 制定《人力资源计划》 | 1d? | 2007-11-06 | 2007-11-07 | 30 | 59.3d | 0d | TDT-项目经理 | 8h |
| 32 | 1.3.8 | 制定《财务计划》 | 0.5d? | 2007-11-07 | 2007-11-07 | 31 | 59.3d | 0d | TDT-财务; TDT-项目经理 | 8h |
| 33 | 1.3.9 | 制定《风险管理计划》 | 0.2d? | 2007-11-07 | 2007-11-08 | 32 | 59.3d |  | TDT-项目经理; TDT-技术负责人; TDT-系统工程师; TDT-市场; TDT-财务 | 8h |
| 34 | 1.3.10 | 建立《产品需求书》到《用户需求书》的跟踪矩阵 | 1d? | 2007-10-30 | 2007-10-30 |  | 65.33d |  | TDT-CM人员 | 8h |
| 35 | 1.3.11 | 建立《系统测试用例》到《产品需求书》的跟踪矩阵 | 1d? | 2007-10-30 | 2007-10-30 |  | 65.33d |  | TDT-CM人员 | 8h |
| 36 | 1.3.12 | 准备需求阶段里程碑评审 | 0.33d? | 2007-10-30 | 2007-10-30 |  | 57d | 0d | TDT-项目经理; TDT-市场; TDT-财务 | 8h |

| ID | WBS | Task | Type | Duration | Start | Finish | Predecessors | Total slack | Free slack | Resources | Work |
| --- | --- | --- | --- | --- | --- | --- | --- | --- | --- | --- | --- |
| 37 | 1.4 | **执行需求阶段里程碑评审** |  | 9d? | 2007-10-30 | 2007-11-12 |  | 57d |  |  | 88h |
| 38 | 1.4.1 | 准备里程碑评审材料 |  | 1d? | 2007-10-30 | 2007-10-31 | 36 | 57d | 0d | TDT-项目经理; TDT-技术负责人; TDT-系统工程师; TDT-市场; TDT-财务 | 40h |
| 39 | 1.4.2 | 举行里程碑评审会议 | milestone | 1d? | 2007-11-08 | 2007-11-09 | 38FS+6d | 57d | 0d | TDT-项目经理; TDT-技术负责人; TDT-系统工程师; TDT-市场; TDT-财务 | 40h |
| 40 | 1.4.3 | 建立与发布需求基线 |  | 1d? | 2007-11-09 | 2007-11-12 | 39 | 57d |  | TDT-CM人员 | 8h |
| 41 | 2 | **设计阶段** |  | 8.33d? | 2007-10-30 | 2007-11-09 |  | 0d |  |  | 416h |
| 42 | 2.1 | **进行系统概要设计** |  | 2.5d? | 2007-10-30 | 2007-11-01 |  | 63.83d |  |  | 56h |
| 43 | 2.1.1 | 确认产品的主要功能 |  | 0.5d? | 2007-10-30 | 2007-10-30 |  | 63.83d | 0d | TDT-技术负责人; TDT-市场 | 8h |
| 44 | 2.1.2 | 明确系统设计约束 |  | 1d? | 2007-10-30 | 2007-10-31 | 43 | 63.83d | 0d | TDT-系统工程师; TDT-技术负责人 | 16h |
| 45 | 2.1.3 | 明确系统设计策略 |  | 1d? | 2007-10-31 | 2007-11-01 | 44 | 63.83d |  | TDT-系统工程师; TDT-技术负责人 | 16h |
| 46 | 2.1.4 | 进行系统概要设计 |  | 1d? | 2007-10-30 | 2007-10-30 |  | 65.33d |  |  |  |
| 47 | 2.1.5 | 编写系统概要设计书 |  | 1d? | 2007-10-30 | 2007-10-30 |  | 65.13d | 0d | TDT-系统工程师 | 8h |
| 48 | 2.1.6 | 评审系统概要设计书 |  | 0.2d? | 2007-10-31 | 2007-10-31 | 47 | 65.13d |  | TDT-技术负责人; TDT-系统工程师; TDT-电路; TDT-结构; TDT-软件 | 8h |
| 49 | 2.2 | **形成最终的《项目计划》** |  | 8d? | 2007-10-30 | 2007-11-08 |  | 0d |  |  | 208h |
| 50 | 2.2.1 | **制定开发计划** |  | 4d? | 2007-10-30 | 2007-11-02 |  | 58.33d | 0d |  | 112h |
| 51 | 2.2.1.1 | 更新项目相关人员参与表 |  | 1d? | 2007-10-30 | 2007-10-30 |  | 58.33d | 0d | TDT-项目经理 | 8h |
| 52 | 2.2.1.2 | 更新规模估计计录表 |  | 1d? | 2007-10-31 | 2007-10-31 | 51 | 58.33d | 0d | TDT-技术负责人 | 8h |
| 53 | 2.2.1.3 | 更新工作量估计计录表 |  | 1d? | 2007-11-01 | 2007-11-01 | 52 | 58.33d | 0d | TDT-技术负责人 | 8h |
| 54 | 2.2.1.4 | 更新软硬件资源估计记录表 |  | 1d? | 2007-11-02 | 2007-11-02 | 53 | 58.33d |  | TDT-项目经理 | 8h |
| 55 | 2.2.1.5 | 制定项目知识技能表 |  | 1d? | 2007-10-30 | 2007-10-30 |  | 60.83d | 0d |  |  |
| 56 | 2.2.1.6 | 制定培训计划表 |  | 0.5d? | 2007-10-31 | 2007-10-31 | 55 | 60.83d |  | TDT-项目经理; TDT-技术负责人 | 8h |
| 57 | 2.2.1.7 | 制定项目数据管理表 |  | 1d? | 2007-10-30 | 2007-10-30 |  | 60.33d | 0d | TDT-系统工程师 | 8h |
| 58 | 2.2.1.8 | 更新MA计划 |  | 1d? | 2007-10-30 | 2007-10-30 |  | 61.33d |  | TDT-项目经理 | 8h |
| 59 | 2.2.1.9 | 制定PPQA计划 |  | 1d? | 2007-10-30 | 2007-10-30 |  | 61.33d |  | TDT-PPQA工程师 | 8h |
| 60 | 2.2.1.10 | 更新沟通计划 |  | 1d? | 2007-10-30 | 2007-10-30 |  | 61.33d |  | TDT-项目经理 | 8h |
| 61 | 2.2.1.11 | 编写系统测试计划 |  | 1d? | 2007-10-30 | 2007-10-30 |  | 61.33d |  | TDT-测试 | 8h |
| 62 | 2.2.1.12 | 制定产品集成计划 |  | 1d? | 2007-10-31 | 2007-10-31 | 57 | 60.33d |  | TDT-系统工程师 | 8h |
| 63 | 2.2.1.13 | 制作购买复用分析结果表 |  | 1d? | 2007-10-30 | 2007-10-30 |  | 61.33d |  | TDT-技术负责人; TDT-项目经理 | 16h |
| 64 | 2.2.1.14 | 制定供应商管理计划 |  | 1d? | 2007-10-30 | 2007-10-30 |  | 61.33d |  | TDT-采购 | 8h |
| 65 | 2.2.2 | 更新WBS |  | 1d? | 2007-11-05 | 2007-11-05 | 50 | 58.33d | 0d | TDT-项目经理 | 8h |
| 66 | 2.2.3 | 更新配置管理计划 |  | 1d? | 2007-11-06 | 2007-11-06 | 65 | 58.33d | 0d | TDT-CM人员 | 8h |
| 67 | 2.2.4 | 更新人力资源计划 |  | 1d? | 2007-11-07 | 2007-11-07 | 66 | 58.33d | 0d | TDT-项目经理 | 8h |
| 68 | 2.2.5 | 更新财务计划 |  | 1d? | 2007-11-08 | 2007-11-08 | 67 | 58.33d |  | TDT-财务 | 8h |
| 69 | 2.2.6 | 更新风险管理计划 |  | 1d? | 2007-11-08 | 2007-11-08 | 65, 66, 67 | 58.33d |  | TDT-项目经理; TDT-技术负责人; TDT-系统工程师; TDT-市场; TDT-财务; TDT-采购 | 48h |
| 70 | 2.2.7 | 建立概要设计到产品需求跟踪矩阵 |  | 1d? | 2007-10-30 | 2007-10-30 |  | 65.33d |  | TDT-CM人员 | 8h |
| 71 | 2.2.8 | 准备设计阶段里程碑评审材料 |  | 0.33d? | 2007-10-30 | 2007-10-30 |  | 0d |  | TDT-项目经理; TDT-市场; TDT-财务 | 8h |

| ID | WBS | Task | Type | Duration | Start | Finish | Predecessors | Total slack | Free slack | Resources | Work |
| --- | --- | --- | --- | --- | --- | --- | --- | --- | --- | --- | --- |
| 72 | 2.3 | **进行PDCP** |  | 8d? | 2007-10-30 | 2007-11-09 |  | 6d |  |  | 152h |
| 73 | 2.3.1 | 准备PDCP会议 |  | 1d? | 2007-10-30 | 2007-10-31 | 71 | 65d |  | TDT-项目经理; TDT-技术负责人; TDT-系统工程师; TDT-市场; TDT-财务; TDT-采购 | 48h |
| 74 | 2.3.2 | 执行PDCP | milestone | 1d? | 2007-11-07 | 2007-11-08 | 71FS+6d | 0d |  | TDT-项目经理; TDT-技术负责人; TDT-系统工程师; TDT-市场; TDT-财务; TDT-采购 | 48h |
| 75 | 2.3.3 | 建议与发布设计基线 |  | 1d? | 2007-11-08 | 2007-11-09 | 74 | 58d |  | TDT-CM人员 | 8h |
| 76 | 2.3.4 | 进行经验教训总结 |  | 1d? | 2007-11-08 | 2007-11-09 | 74 | 0d |  | TDT-项目经理; TDT-技术负责人; TDT-系统工程师; TDT-市场; TDT-财务; TDT-采购 | 48h |
| 77 | 3 | **开发阶段** |  | 23.83d? | 2007-11-09 | 2007-12-13 |  | 0d |  |  | 468h |
| 78 | 3.1 | **扩建项目团队** |  | 3d? | 2007-11-09 | 2007-11-14 |  | 0d |  |  | 24h |
| 79 | 3.1.1 | 提出人员需求 |  | 1d? | 2007-11-09 | 2007-11-12 | 76 | 0d |  | TDT-项目经理 | 8h |
| 80 | 3.1.2 | 完成人员召集 |  | 1d? | 2007-11-12 | 2007-11-13 | 79 | 0d |  | TDT-项目经理 | 8h |
| 81 | 3.1.3 | 更新项目内部运行规则并明确人员分工 |  | 1d? | 2007-11-13 | 2007-11-14 | 80 | 0d |  | TDT-项目经理 | 8h |
| 82 | 3.2 | **进行电路开发** |  | 5.25d? | 2007-11-14 | 2007-11-21 |  | 1.75d |  |  | 44h |
| 83 | 3.2.1 | 完成电路原理图开发 |  | 1d? | 2007-11-14 | 2007-11-15 | 81 | 1.75d | 0d | TDT-电路 | 8h |
| 84 | 3.2.2 | 完成元器件选型 |  | 1d? | 2007-11-15 | 2007-11-16 | 83 | 1.75d | 0d | TDT-电路 | 8h |
| 85 | 3.2.3 | 完成PCB排版 |  | 1d? | 2007-11-16 | 2007-11-19 | 84 | 1.75d | 0d | TDT-电路 | 8h |
| 86 | 3.2.4 | 完成电路样板装调、测试 |  | 1d? | 2007-11-19 | 2007-11-20 | 85 | 1.75d | 0d | TDT-电路 | 8h |
| 87 | 3.2.5 | 完成设计资料初稿 |  | 1d? | 2007-11-20 | 2007-11-21 | 86 | 1.75d | 0d | TDT-电路 | 8h |
| 88 | 3.2.6 | 签订元器件供应商合同 |  | 0.25d? | 2007-11-21 | 2007-11-21 | 87 | 1.75d |  | TDT-采购; TDT-电路 | 4h |
| 89 | 3.3 | **进行结构开发** |  | 3d? | 2007-11-14 | 2007-11-19 |  | 4d |  |  | 32h |
| 90 | 3.3.1 | 进行结构件设计 |  | 1d? | 2007-11-14 | 2007-11-15 | 81 | 4d | 0d | TDT-结构 | 8h |
| 91 | 3.3.2 | 完成结构BOM表初稿的制作 |  | 1d? | 2007-11-15 | 2007-11-16 | 90 | 4d | 0d | TDT-结构 | 8h |
| 92 | 3.3.3 | 委托进行结构专用件加工制造 |  | 0.5d? | 2007-11-16 | 2007-11-16 | 91 | 4d | 0d | TDT-采购; TDT-结构 | 8h |
| 93 | 3.3.4 | 进行工艺性分析 |  | 0.5d? | 2007-11-16 | 2007-11-19 | 92 | 4d |  | TDT-结构; TDT-系统工程师 | 8h |
| 94 | 3.4 | **进行软件详细设计** |  | 8d? | 2007-11-14 | 2007-11-26 |  | 0d |  |  | 120h |
| 95 | 3.4.1 | 进行各子模块的设计 |  | 1d? | 2007-11-14 | 2007-11-15 | 81 | 0d |  | TDT-软件 | 8h |
| 96 | 3.4.2 | 编写数据库设计说明书 |  | 1d? | 2007-11-15 | 2007-11-16 | 95 | 0d |  | TDT-软件 | 8h |
| 97 | 3.4.3 | 进行数据结构的设计 |  | 1d? | 2007-11-16 | 2007-11-19 | 96 | 0d |  | TDT-软件 | 8h |
| 98 | 3.4.4 | 进行算法的设计 |  | 1d? | 2007-11-19 | 2007-11-20 | 97 | 0d |  | TDT-软件 | 8h |
| 99 | 3.4.5 | 进行软件界面的设计 |  | 1d? | 2007-11-20 | 2007-11-21 | 98 | 0d |  | TDT-软件 | 8h |
| 100 | 3.4.6 | 编制软件详细设计文档 |  | 1d? | 2007-11-21 | 2007-11-22 | 99 | 0d |  | TDT-软件 | 8h |
| 101 | 3.4.7 | 评审详细设计文档 |  | 1d? | 2007-11-22 | 2007-11-23 | 100 | 0d |  | TDT-项目经理; TDT-系统工程师; TDT-软件 | 24h |
| 102 | 3.4.8 | 进行DR2评审 |  | 1d? | 2007-11-23 | 2007-11-26 | 82, 89, 101 | 0d |  | TDT-项目经理; TDT-技术负责人; TDT-系统工程师; TDT-电路; TDT-结构; TDT-软件 | 48h |

| ID | WBS | Task | Duration | Start | Finish | Predecessors | Total slack | Free slack | Resources | Work |
| --- | --- | --- | --- | --- | --- | --- | --- | --- | --- | --- |
| 103 | 3.5 | **软件编码和单元测试** | 2.33d? | 2007-11-26 | 2007-11-28 |  | 0d |  |  | 32h |
| 104 | 3.5.1 | 进行软件编码 | 1d? | 2007-11-26 | 2007-11-27 | 102 | 0d |  | TDT-编码 | 8h |
| 105 | 3.5.2 | 进行代码评审 | 0.33d? | 2007-11-27 | 2007-11-27 | 104 | 0d |  | TDT-编码; TDT-软件; TDT-技术负责人 | 8h |
| 106 | 3.5.3 | 进行单元测试 | 0.5d? | 2007-11-27 | 2007-11-28 | 105 | 0d |  | TDT-编码; TDT-软件 | 8h |
| 107 | 3.5.4 | 记录和修正缺陷 | 0.5d? | 2007-11-28 | 2007-11-28 | 106 | 0d |  | TDT-编码; TDT-软件 | 8h |
| 108 | 3.6 | **进行产品集成和集成测试** | 5.5d? | 2007-11-28 | 2007-12-06 |  | 0d |  |  | 120h |
| 109 | 3.6.1 | 搭建集成测试环境 | 1d? | 2007-11-28 | 2007-11-29 | 107 | 0d |  | TDT-测试; TDT-编码 | 16h |
| 110 | 3.6.2 | 进行产品集成 | 0.5d? | 2007-11-29 | 2007-11-30 | 109 | 0d |  | TDT-编码; TDT-测试 | 8h |
| 111 | 3.6.3 | 进行集成测试 | 1d? | 2007-11-30 | 2007-12-03 | 110 | 0d |  | TDT-测试 | 8h |
| 112 | 3.6.4 | 记录和修正缺陷 | 1d? | 2007-12-03 | 2007-12-04 | 111 | 0d |  | TDT-测试; TDT-编码 | 16h |
| 113 | 3.6.5 | 编制《 用户操作手册》 | 1d? | 2007-12-04 | 2007-12-05 | 112 | 0d |  | TDT-技术负责人; TDT-系统工程师; TDT-电路; TDT-结构; TDT-软件; TDT-编码 | 48h |
| 114 | 3.6.6 | 评审《 用户操作手册》 | 1d? | 2007-12-05 | 2007-12-06 | 113 | 0d |  | TDT-技术负责人; TDT-项目经理; TDT-系统工程师 | 24h |
| 115 | 3.7 | **市场分析与策略再确认** | 5d? | 2007-12-06 | 2007-12-13 |  | 0d |  |  | 96h |
| 116 | 3.7.1 | 召开市场分析与策略确认会 | 1d? | 2007-12-06 | 2007-12-07 | 114 | 0d |  | TDT-市场; TDT-项目经理; TDT-技术负责人 | 24h |
| 117 | 3.7.2 | 更新项目建议书 | 1d? | 2007-12-07 | 2007-12-10 | 116 | 0d |  | TDT-项目经理 | 8h |
| 118 | 3.7.3 | 进行DR3评审 | 1d? | 2007-12-10 | 2007-12-11 | 117 | 0d |  | TDT-项目经理; TDT-技术负责人; TDT-系统工程师; TDT-市场; TDT-采购; TDT-财务 | 48h |
| 119 | 3.7.4 | 建立代码到设计的跟踪矩阵 | 1d? | 2007-12-11 | 2007-12-12 | 118 | 34.17d | 0d | TDT-CM人员 | 8h |
| 120 | 3.7.5 | 建立并发布编码基线 | 1d? | 2007-12-12 | 2007-12-13 | 119 | 34.17d |  | TDT-CM人员 | 8h |
| 121 | 4 | **验证阶段** | 22.33d? | 2007-12-11 | 2008-01-10 |  | 0d |  |  | 304h |
| 122 | 4.1 | **更新TDT成员** | 3d? | 2007-12-11 | 2007-12-14 |  | 0d |  |  | 24h |
| 123 | 4.1.1 | 提出人员需求 | 1d? | 2007-12-11 | 2007-12-12 | 118 | 0d |  | TDT-项目经理 | 8h |
| 124 | 4.1.2 | 完成人员召集 | 1d? | 2007-12-12 | 2007-12-13 | 123 | 0d |  | TDT-项目经理 | 8h |
| 125 | 4.1.3 | 更新项目内部运行规则 | 1d? | 2007-12-13 | 2007-12-14 | 124 | 0d |  | TDT-项目经理 | 8h |
| 126 | 4.2 | **系统测试** | 4d? | 2007-12-14 | 2007-12-20 |  | 0d |  |  | 56h |
| 127 | 4.2.1 | 更新《 系统测试用例》 | 1d? | 2007-12-14 | 2007-12-17 | 125 | 0d |  | TDT-测试 | 8h |
| 128 | 4.2.2 | 搭建系统测试环境 | 1d? | 2007-12-17 | 2007-12-18 | 127 | 0d |  | TDT-测试 | 8h |
| 129 | 4.2.3 | 进行系统测试 | 1d? | 2007-12-18 | 2007-12-19 | 128 | 0d |  | TDT-测试 | 8h |
| 130 | 4.2.4 | 记录和修正缺陷 | 1d? | 2007-12-19 | 2007-12-20 | 129 | 0d |  | TDT-测试; TDT-电路; TDT-结构; TDT-软件 | 32h |

| ID | WBS | Task | Type | Duration | Start | Finish | Predecessors | Total slack | Free slack | Resources | Work |
| --- | --- | --- | --- | --- | --- | --- | --- | --- | --- | --- | --- |
| 131 | 4.3 | **进行小批量生产** |  | 3d? | 2007-12-20 | 2007-12-25 |  | 0d |  |  | 24h |
| 132 | 4.3.1 | 小批量试制 |  | 1d? | 2007-12-20 | 2007-12-21 | 130 | 0d |  | TDT-项目经理 | 8h |
| 133 | 4.3.2 | 进行质量检测 |  | 1d? | 2007-12-21 | 2007-12-24 | 132 | 0d |  |  |  |
| 134 | 4.3.3 | 小批量试制报告 |  | 1d? | 2007-12-24 | 2007-12-25 | 133 | 0d |  | TDT-项目经理; TDT-技术负责人 | 16h |
| 135 | 4.4 | **交付客户验证** |  | 4.33d? | 2007-12-25 | 2007-12-31 |  | 0d |  |  | 112h |
| 136 | 4.4.1 | 交付客户验证 |  | 1d? | 2007-12-25 | 2007-12-26 | 134 | 0d |  | TDT-市场 | 8h |
| 137 | 4.4.2 | 对客户验证数据进行收集与分析 |  | 1d? | 2007-12-26 | 2007-12-27 | 136 | 0d |  | TDT-市场; TDT-技术负责人; TDT-测试 | 24h |
| 138 | 4.4.3 | 更新《 用户操作手册》 |  | 1d? | 2007-12-27 | 2007-12-28 | 137 | 0d |  | TDT-技术负责人 | 8h |
| 139 | 4.4.4 | 进行DR4 |  | 1d? | 2007-12-28 | 2007-12-31 | 138 | 0d |  | TDT-项目经理; TDT-技术负责人; TDT-系统工程师; TDT-市场; TDT-财务; TDT-电路; TDT-结构; TDT-软件 | 64h |
| 140 | 4.4.5 | 准备ADCP工作包 |  | 0.33d? | 2007-12-31 | 2007-12-31 | 139 | 0d |  | TDT-项目经理; TDT-市场; TDT-财务 | 8h |
| 141 | 4.5 | **执行ADCP** |  | 8d? | 2007-12-31 | 2008-01-10 |  | 6d |  |  | 88h |
| 142 | 4.5.1 | 准备ADCP |  | 1d? | 2007-12-31 | 2008-01-01 | 140 | 20.83d |  | TDT-项目经理; TDT-技术负责人; TDT-市场; TDT-财务 | 32h |
| 143 | 4.5.2 | 召开ADCP会议 | milestone | 1d? | 2008-01-08 | 2008-01-09 | 140FS+6d | 0d |  | TDT-项目经理; TDT-技术负责人; TDT-市场; TDT-财务 | 32h |
| 144 | 4.5.3 | 执行评审结果 |  | 1d? | 2008-01-09 | 2008-01-10 | 143 | 0d |  | TDT-项目经理 | 8h |
| 145 | 4.5.4 | 经验总结 |  | 0.25d? | 2008-01-09 | 2008-01-09 | 143 | 14.58d |  | TDT-项目经理; TDT-技术负责人; TDT-市场; TDT-财务 | 8h |
| 146 | 4.5.5 | 建立与发布产品基线 |  | 1d? | 2008-01-09 | 2008-01-10 | 143 | 13.83d |  | TDT-CM人员 | 8h |
| 147 | 5 | **发布阶段** |  | 8.83d? | 2008-01-10 | 2008-01-23 |  | 0d |  |  | 272h |
| 148 | 5.1 | **更新团队成员** |  | 3d? | 2008-01-10 | 2008-01-15 |  | 10.83d |  |  | 24h |
| 149 | 5.1.1 | 提出人员需求 |  | 1d? | 2008-01-10 | 2008-01-11 | 144 | 10.83d | 0d | TDT-项目经理 | 8h |
| 150 | 5.1.2 | 完成人员召集 |  | 1d? | 2008-01-11 | 2008-01-14 | 149 | 10.83d | 0d | TDT-项目经理 | 8h |
| 151 | 5.1.3 | 更新项目内部运行规则 |  | 1d? | 2008-01-14 | 2008-01-15 | 150 | 10.83d |  | TDT-项目经理 | 8h |
| 152 | 5.2 | **确认技术推介和转让计划** |  | 3d? | 2008-01-10 | 2008-01-15 |  | 0d |  |  | 40h |
| 153 | 5.2.1 | 进行市场再确认 |  | 1d? | 2008-01-10 | 2008-01-11 | 144 | 0d |  | TDT-市场; TDT-项目经理 | 16h |
| 154 | 5.2.2 | 更新《技术推介计划》 |  | 1d? | 2008-01-11 | 2008-01-14 | 153 | 0.5d | 0d | TDT-市场 | 8h |
| 155 | 5.2.3 | 更新《技术转让计划》 |  | 1d? | 2008-01-14 | 2008-01-15 | 154 | 10.83d |  | TDT-市场 | 8h |
| 156 | 5.2.4 | 更新《交付与转移计划》 |  | 1d? | 2008-01-11 | 2008-01-14 | 153 | 11.83d |  | TDT-项目经理 | 8h |

| ID | WBS | Task | Duration | Start | Finish | Predecessors | Total slack | Free slack | Resources | Work |
| --- | --- | --- | --- | --- | --- | --- | --- | --- | --- | --- |
| 157 | 5.3 | **人员培训** | 3.5d? | 2008-01-10 | 2008-01-15 |  | 0d |  |  | 32h |
| 158 | 5.3.1 | 修正培训计划 | 1d? | 2008-01-11 | 2008-01-14 | 153 | 0d |  | TDT-项目经理 | 8h |
| 159 | 5.3.2 | 编制培训材料 | 1d? | 2008-01-10 | 2008-01-11 | 144 | 1d |  | TDT-技术负责人 | 8h |
| 160 | 5.3.3 | 人员培训 | 1d? | 2008-01-14 | 2008-01-15 | 158, 159 | 0d |  | TDT-技术负责人 | 8h |
| 161 | 5.3.4 | 培训总结 | 0.5d? | 2008-01-15 | 2008-01-15 | 160 | 0d |  | TDT-技术负责人; TDT-项目经理 | 8h |
| 162 | 5.4 | **项目组DR4评审** | 3.5d? | 2008-01-14 | 2008-01-17 |  | 0.5d |  |  | 96h |
| 163 | 5.4.1 | 更新文档清单 | 1d? | 2008-01-14 | 2008-01-15 | 154 | 10.83d |  | TDT-技术负责人 | 8h |
| 164 | 5.4.2 | 修订和评审用户手册等文档 | 1d? | 2008-01-14 | 2008-01-15 | 154 | 0.5d |  | TDT-技术负责人; TDT-系统工程师; TDT-电路; TDT-结构; TDT-软件 | 40h |
| 165 | 5.4.3 | 组织召开DR4评审会 | 1d? | 2008-01-16 | 2008-01-16 | 161, 164 | 0d |  | TDT-项目经理; TDT-技术负责人; TDT-市场; TDT-采购; TDT-系统工程师 | 40h |
| 166 | 5.4.4 | 编写《项目结题报告》 | 1d? | 2008-01-17 | 2008-01-17 | 165 | 0d |  | TDT-项目经理 | 8h |
| 167 | 5.5 | **进行技术推介** | 3.33d? | 2008-01-18 | 2008-01-23 |  | 0d |  |  | 80h |
| 168 | 5.5.1 | 按计划落实推介对象 | 0.33d? | 2008-01-18 | 2008-01-18 | 166 | 0d |  | TDT-市场; TDT-项目经理; TDT-技术负责人 | 8h |
| 169 | 5.5.2 | 制作推介材料 | 1d? | 2008-01-18 | 2008-01-21 | 168 | 0d |  | TDT-市场; TDT-项目经理; TDT-技术负责人 | 24h |
| 170 | 5.5.3 | 组织进行技术推介 | 1d? | 2008-01-21 | 2008-01-22 | 169 | 0d |  | TDT-市场; TDT-项目经理; TDT-技术负责人 | 24h |
| 171 | 5.5.4 | 进行推介总结 | 1d? | 2008-01-22 | 2008-01-23 | 170 | 0d |  | TDT-市场; TDT-项目经理; TDT-技术负责人 | 24h |
| 172 | 6 | **生命周期支持阶段** | 66.33d? | 2007-10-30 | 2008-01-30 |  | 0d |  |  | 296h |
| 173 | 6.1 | **进行技术转让和常规技术服务** | 3.5d? | 2008-01-23 | 2008-01-28 |  | 0d |  |  | 96h |
| 174 | 6.1.1 | 执行技术转让计划 | 1d? | 2008-01-23 | 2008-01-24 | 171 | 0d |  | TDT-项目经理; TDT-市场; TDT-技术负责人 | 24h |
| 175 | 6.1.2 | 执行技术转让与支持计划 | 1d? | 2008-01-24 | 2008-01-25 | 174 | 1.5d | 0d | TDT-项目经理; TDT-技术负责人; TDT-市场 | 24h |
| 176 | 6.1.3 | 执行服务与支持计划 | 1d? | 2008-01-25 | 2008-01-28 | 175 | 1.5d | 0d | TDT-项目经理; TDT-技术负责人; TDT-市场; TDT-电路; TDT-软件 | 40h |
| 177 | 6.1.4 | 进行软件升级 | 0.5d? | 2008-01-28 | 2008-01-28 | 176 | 1.5d |  | TDT-技术负责人; TDT-软件 | 8h |
| 178 | 6.2 | **与LMT团队进行交接** | 5d? | 2008-01-23 | 2008-01-30 |  | 0d |  |  | 64h |
| 179 | 6.2.1 | 准备交接资料 | 1d? | 2008-01-23 | 2008-01-24 | 174SS | 0d |  | TDT-项目经理; TDT-技术负责人; TDT-市场 | 24h |
| 180 | 6.2.2 | 相关文档的存档 | 1d? | 2008-01-24 | 2008-01-25 | 179 | 0d |  | TDT-项目经理; TDT-技术负责人 | 16h |
| 181 | 6.2.3 | 进行TDT团队工作总结 | 1d? | 2008-01-25 | 2008-01-28 | 180 | 0d |  | TDT-项目经理 | 8h |

| ID | WBS | Task | Duration | Start | Finish | Predecessors | Total slack | Free slack | Resources | Work |
| --- | --- | --- | --- | --- | --- | --- | --- | --- | --- | --- |
| 182 | 6.2.4 | **召开资料交接会议** | 2d? | 2008-01-28 | 2008-01-30 |  | 0d |  |  | 16h |
| 183 | 6.2.4.1 | 转交产品建议书 | 1d? | 2008-01-28 | 2008-01-29 | 181 | 0d |  | TDT-项目经理 | 8h |
| 184 | 6.2.4.2 | 转交产品技术文档 | 1d? | 2008-01-29 | 2008-01-30 | 183 | 0d |  | TDT-技术负责人 | 8h |
| 185 | 6.3 | **更新《生命周期停止计划》** | 2.33d? | 2007-10-30 | 2007-11-01 |  | 51.75d |  |  | 40h |
| 186 | 6.3.1 | 生命周期损益评估 | 0.33d? | 2007-10-30 | 2007-10-30 |  | 51.75d | 0d | LMT-经理; LMT-财务; LMT-市场 | 8h |
| 187 | 6.3.2 | 更新《生命周期停止计划》 | 1d? | 2007-10-30 | 2007-10-31 | 186 | 51.75d | 0d | LMT-经理 | 8h |
| 188 | 6.3.3 | 准备EDCP工作包 | 1d? | 2007-10-31 | 2007-11-01 | 187 | 51.75d | 0d | LMT-经理; LMT-市场; LMT-财务 | 24h |
| 189 | 6.4 | **执行EDCP** | 8d? | 2007-11-01 | 2007-11-13 |  | 56d |  |  | 32h |
| 190 | 6.4.1 | 准备EDCP | 1d? | 2007-11-01 | 2007-11-02 | 188 | 63d |  |  |  |
| 191 | 6.4.2 | 召开EDCP会议 | 1d? | 2007-11-09 | 2007-11-12 | 188FS+6d | 51.75d | 0d | LMT-经理; LMT-市场; LMT-财务 | 24h |
| 192 | 6.4.3 | 执行EDCP评审结果 | 1d? | 2007-11-12 | 2007-11-13 | 191 | 51.75d | 0d | LMT-经理 | 8h |
| 193 | 6.5 | **执行《生命周期停止计划》** | 4.25d? | 2007-11-13 | 2007-11-19 |  | 51.75d |  |  | 64h |
| 194 | 6.5.1 | **执行《生命周期停止计划》** | 2d? | 2007-11-13 | 2007-11-15 |  | 51.75d |  |  | 32h |
| 195 | 6.5.1.1 | 执行《技术转让停止计划》 | 1d? | 2007-11-13 | 2007-11-14 | 192 | 51.75d | 0d | LMT-技术; LMT-经理 | 16h |
| 196 | 6.5.1.2 | 执行《售后服务停止计划》 | 1d? | 2007-11-14 | 2007-11-15 | 195 | 51.75d | 0d | LMT-技术; LMT-经理 | 16h |
| 197 | 6.5.2 | 财务核算 | 0.25d? | 2007-11-15 | 2007-11-15 | 196 | 51.75d | 0d | TDT-项目经理; TDT-财务; LMT-经理; LMT-财务 | 8h |
| 198 | 6.5.3 | 产品生命周期总结 | 1d? | 2007-11-15 | 2007-11-16 | 196 | 53d |  | LMT-经理 | 8h |
| 199 | 6.5.4 | 编制项目总结报告 | 1d? | 2007-11-15 | 2007-11-16 | 197 | 51.75d | 0d | TDT-项目经理 | 8h |
| 200 | 6.5.5 | 关闭项目 | 1d? | 2007-11-16 | 2007-11-19 | 199 | 51.75d |  | TDT-项目经理 | 8h |
