Schedule from MS Project, 2009-05-20 to 2009-06-16, A marks actual dates.

## Calendars

- 标准: Mon-Fri 08:00-12:00, 13:00-17:00; Sat-Sun off. Exceptions (off unless hours are given): 2009-05-23 08:00-12:00, 13:00-17:00, 2009-05-30 08:00-12:00, 13:00-17:00, 2009-06-06 08:00-12:00, 13:00-17:00, 2009-06-13 08:00-12:00, 13:00-17:00.

## Resources

| Resource |
| --- |
| 项目经理:马涛 |
| 需求:严静娟 |
| 设计:王帅 |
| 设计:张敏 |
| 编码:季玉龙 |
| 编码:任利维 |
| 编码:殷于良 |
| 测试:刘俊 |
| 测试:张达 |
| 测试:刘镇华 |
| 测试:侯长萍 |
| 文档:李迎生 |
| PPQA:顾丽萍 |
| PPQA:张磊 |
| 客户:吴炜 |

## Schedule

| ID | WBS | Task | Duration | Start | Finish | Predecessors | Complete | Baseline start | Baseline finish | Baseline duration | Constraint | Resources | Work | Actual work | Text1 |
| --- | --- | --- | --- | --- | --- | --- | --- | --- | --- | --- | --- | --- | --- | --- | --- |
| 1 | 1 | 项目名称：芯潮网上购物平台 | 23d? | 2009-05-20 08:00 A | 2009-06-15 17:00 A |  | 100% | 2009-05-20 08:00 | 2009-06-15 17:00 | 23d? | start no earlier than 2009-05-20 08:00 |  |  |  |  |
| 2 | 2 | **项目启动** | 1.2d? | 2009-05-20 08:00 A | 2009-05-21 09:36 A |  | 100% | 2009-05-20 08:00 | 2009-05-21 09:36 | 1.2d? |  |  | 16h | 16h |  |
| 3 | 2.1 | 建立项目 | 0.2d | 2009-05-20 08:00 A | 2009-05-20 09:36 A |  | 100% | 2009-05-20 08:00 | 2009-05-20 09:36 | 0.2d | start no earlier than 2009-05-20 08:00 |  |  |  |  |
| 4 | 2.2 | 项目启动用具包移交 | 0.1d | 2009-05-20 09:36 A | 2009-05-20 10:24 A | 3 | 100% | 2009-05-20 09:36 | 2009-05-20 10:24 | 0.1d |  | 客户:吴炜 | 0.8h | 0.8h |  |
| 5 | 2.3 | 确认项目利益相关人、项目资源及关键的依赖关系 | 0.1d | 2009-05-20 10:24 A | 2009-05-20 11:12 A | 4 | 100% | 2009-05-20 10:24 | 2009-05-20 11:12 | 0.1d | start no earlier than 2009-05-20 08:00 | 项目经理:马涛 | 0.8h | 0.8h |  |
| 6 | 2.4 | 对项目进行可行性分析 | 0.2d | 2009-05-20 11:12 A | 2009-05-20 13:48 A | 5 | 100% | 2009-05-20 11:12 | 2009-05-20 13:48 | 0.2d | start no earlier than 2009-05-20 08:00 | 项目经理:马涛 | 1.6h | 1.6h |  |
| 7 | 2.5 | 对项目进行初始估算 | 0.2d | 2009-05-20 13:48 A | 2009-05-20 15:24 A | 6 | 100% | 2009-05-20 13:48 | 2009-05-20 15:24 | 0.2d | start no earlier than 2009-05-20 08:00 | 项目经理:马涛 | 1.6h | 1.6h |  |
| 8 | 2.6 | 准备项目任务书 | 0.2d | 2009-05-20 15:24 A | 2009-05-20 17:00 A | 7 | 100% | 2009-05-20 15:24 | 2009-05-20 17:00 | 0.2d | start no earlier than 2009-05-20 08:00 | 项目经理:马涛 | 1.6h | 1.6h |  |
| 9 | 2.7 | 召开项目启动会 | 0.2d? | 2009-05-21 08:00 A | 2009-05-21 09:36 A | 8 | 100% | 2009-05-21 08:00 | 2009-05-21 09:36 | 0.2d? | start no earlier than 2009-05-21 08:00 | 文档:李迎生; 项目经理:马涛; 需求:严静娟; 设计:王帅; 编码:季玉龙; 编码:任利维 | 9.6h | 9.6h |  |
| 10 | 3 | **项目计划** | 1.6d? | 2009-05-21 08:00 A | 2009-05-22 13:48 A |  | 100% | 2009-05-21 08:00 | 2009-05-22 13:48 | 1.6d? |  |  | 14.4h | 14.4h |  |
| 11 | 3.1 | 1、过程裁剪 | 0.1d? | 2009-05-21 08:00 A | 2009-05-21 08:48 A |  | 100% | 2009-05-21 08:00 | 2009-05-21 08:48 | 0.1d? | start no earlier than 2009-05-21 08:00 | 项目经理:马涛 | 0.8h | 0.8h |  |
| 12 | 3.2 | 2、进行工作任务结构分解 | 0.1d? | 2009-05-21 08:48 A | 2009-05-21 09:36 A | 11 | 100% | 2009-05-21 08:48 | 2009-05-21 09:36 | 0.1d? |  | 项目经理:马涛 | 0.8h | 0.8h |  |
| 13 | 3.3 | 3、详细估算 | 0.2d? | 2009-05-21 09:36 A | 2009-05-21 11:12 A | 12 | 100% | 2009-05-21 09:36 | 2009-05-21 11:12 | 0.2d? |  | 项目经理:马涛 | 1.6h | 1.6h |  |
| 14 | 3.4 | 4、定义项目团队结构和项目接口 | 0.1d? | 2009-05-21 11:12 A | 2009-05-21 12:00 A | 13 | 100% | 2009-05-21 11:12 | 2009-05-21 12:00 | 0.1d? |  | 项目经理:马涛 | 0.8h | 0.8h |  |
| 15 | 3.5 | 5、建立沟通计划 | 0.1d? | 2009-05-21 13:00 A | 2009-05-21 13:48 A | 14 | 100% | 2009-05-21 13:00 | 2009-05-21 13:48 | 0.1d? |  | 项目经理:马涛 | 0.8h | 0.8h |  |
| 16 | 3.6 | 6、建立培训计划 | 0.1d? | 2009-05-21 13:48 A | 2009-05-21 14:36 A | 15 | 100% | 2009-05-21 13:48 | 2009-05-21 14:36 | 0.1d? |  | 项目经理:马涛 | 0.8h | 0.8h |  |
| 17 | 3.7 | 7、管理转包工作 | 0.1d? | 2009-05-21 14:36 A | 2009-05-21 15:24 A | 16 | 100% | 2009-05-21 14:36 | 2009-05-21 15:24 | 0.1d? |  | 项目经理:马涛 | 0.8h | 0.8h |  |
| 18 | 3.8 | 8、管理客户提供资料 | 0.1d? | 2009-05-21 15:24 A | 2009-05-21 16:12 A | 17 | 100% | 2009-05-21 15:24 | 2009-05-21 16:12 | 0.1d? |  | 文档:李迎生 | 0.8h | 0.8h |  |
| 19 | 3.9 | 9、用户文档管理 | 0.1d? | 2009-05-21 16:12 A | 2009-05-21 17:00 A | 18 | 100% | 2009-05-21 16:12 | 2009-05-21 17:00 | 0.1d? |  | 项目经理:马涛 | 0.8h | 0.8h |  |
| 20 | 3.10 | 10、定义变更管理机制、建立配置计划 | 0.1d? | 2009-05-22 08:00 A | 2009-05-22 08:48 A | 19 | 100% | 2009-05-22 08:00 | 2009-05-22 08:48 | 0.1d? |  | 项目经理:马涛 | 0.8h | 0.8h |  |
| 21 | 3.11 | 11、建立问题管理机制 | 0.1d? | 2009-05-22 08:48 A | 2009-05-22 09:36 A | 20 | 100% | 2009-05-22 08:48 | 2009-05-22 09:36 | 0.1d? |  | 项目经理:马涛 | 0.8h | 0.8h |  |
| 22 | 3.12 | 12、确保项目职责移交 | 0.1d? | 2009-05-22 09:36 A | 2009-05-22 10:24 A | 21 | 100% | 2009-05-22 09:36 | 2009-05-22 10:24 | 0.1d? |  | 项目经理:马涛 | 0.8h | 0.8h | 任务 |
| 23 | 3.13 | 13、建立项目跟踪机制 | 0.1d? | 2009-05-22 10:24 A | 2009-05-22 11:12 A | 22 | 100% | 2009-05-22 10:24 | 2009-05-22 11:12 | 0.1d? |  | 项目经理:马涛 | 0.8h | 0.8h | 任务 |
| 24 | 3.14 | 14、建立数据管理计划 | 0.1d? | 2009-05-22 11:12 A | 2009-05-22 12:00 A | 23 | 100% | 2009-05-22 11:12 | 2009-05-22 12:00 | 0.1d? |  | 编码:任利维 | 0.8h | 0.8h | 任务 |
| 25 | 3.15 | 15、项目计划评审 | 0.1d? | 2009-05-22 13:00 A | 2009-05-22 13:48 A | 24 | 100% | 2009-05-22 13:00 | 2009-05-22 13:48 | 0.1d? |  | 项目经理:马涛; PPQA:顾丽萍; PPQA:张磊 | 2.4h | 2.4h | 任务 |

| ID | WBS | Task | Duration | Start | Finish | Predecessors | Complete | Baseline start | Baseline finish | Baseline duration | Constraint | Resources | Work | Actual work |
| --- | --- | --- | --- | --- | --- | --- | --- | --- | --- | --- | --- | --- | --- | --- |
| 26 | 4 | **需求与分析** | 2d? | 2009-05-22 08:00 A | 2009-05-23 17:00 A |  | 100% | 2009-05-22 08:00 | 2009-05-23 17:00 | 2d? |  |  | 14.8h | 14.8h |
| 27 | 4.1 | 1、提出业务需求 | 0.1d? | 2009-05-22 08:00 A | 2009-05-22 08:48 A |  | 100% | 2009-05-22 08:00 | 2009-05-22 08:48 | 0.1d? | start no earlier than 2009-05-22 08:00 | 需求:严静娟 | 0.8h | 0.8h |
| 28 | 4.2 | 2、与客户业务人员进行需求初步沟通 | 0.1d? | 2009-05-22 08:48 A | 2009-05-22 09:36 A | 27 | 100% | 2009-05-22 08:48 | 2009-05-22 09:36 | 0.1d? |  | 需求:严静娟 | 0.8h | 0.8h |
| 29 | 4.3 | 3.与相关开发人员进行需求初步沟通 | 0.1d? | 2009-05-22 09:36 A | 2009-05-22 10:24 A | 28 | 100% | 2009-05-22 09:36 | 2009-05-22 10:24 | 0.1d? |  | 需求:严静娟; 客户:吴炜 [50%] | 1.2h | 1.2h |
| 30 | 4.4 | 4.进行需求影响分析 | 0.1d? | 2009-05-22 10:24 A | 2009-05-22 11:12 A | 29 | 100% | 2009-05-22 10:24 | 2009-05-22 11:12 | 0.1d? |  | 文档:李迎生 | 0.8h | 0.8h |
| 31 | 4.5 | 5.形成业务需求回复意见 | 0.1d? | 2009-05-22 11:12 A | 2009-05-22 12:00 A | 30 | 100% | 2009-05-22 11:12 | 2009-05-22 12:00 | 0.1d? |  | 客户:吴炜 | 0.8h | 0.8h |
| 32 | 4.6 | 6.进行需求讨论 | 0.1d? | 2009-05-22 13:00 A | 2009-05-22 13:48 A | 31 | 100% | 2009-05-22 13:00 | 2009-05-22 13:48 | 0.1d? |  | 文档:李迎生 | 0.8h | 0.8h |
| 33 | 4.7 | 7.生成业务需求 | 0.1d? | 2009-05-22 13:48 A | 2009-05-22 14:36 A | 32 | 100% | 2009-05-22 13:48 | 2009-05-22 14:36 | 0.1d? |  | 文档:李迎生 | 0.8h | 0.8h |
| 34 | 4.8 | 8.批准定版需求，确保制定需求跟踪矩阵 | 0.1d? | 2009-05-22 15:24 A | 2009-05-22 16:12 A | 33 | 100% | 2009-05-22 15:24 | 2009-05-22 16:12 | 0.1d? |  | 项目经理:马涛 | 0.8h | 0.8h |
| 35 | 4.9 | 9.进行需求开发 | 0.1d? | 2009-05-22 16:12 A | 2009-05-22 17:00 A | 34 | 100% | 2009-05-22 16:12 | 2009-05-22 17:00 | 0.1d? |  |  |  |  |
| 36 | 4.10 | 10.组织需求技术评审 | 0.4d? | 2009-05-23 08:00 A | 2009-05-23 11:12 A | 35 | 100% | 2009-05-23 08:00 | 2009-05-23 11:12 | 0.4d? |  | 项目经理:马涛 | 3.2h | 3.2h |
| 37 | 4.11 | 11.批准产品需求规格书，确保更新产品需求规格书 | 0.3d? | 2009-05-23 11:12 A | 2009-05-23 14:36 A | 36 | 100% | 2009-05-23 11:12 | 2009-05-23 14:36 | 0.3d? |  | 项目经理:马涛 | 2.4h | 2.4h |
| 38 | 4.12 | 12.建立需求基线 | 0.3d? | 2009-05-23 14:36 A | 2009-05-23 17:00 A | 37 | 100% | 2009-05-23 14:36 | 2009-05-23 17:00 | 0.3d? |  | 项目经理:马涛 | 2.4h | 2.4h |
| 39 | 5 | **分析与设计** | 6d? | 2009-05-25 08:00 A | 2009-05-30 17:00 A |  | 100% | 2009-05-25 08:00 | 2009-05-30 17:00 | 6d? |  |  | 41.6h | 41.6h |
| 40 | 5.1 | 选择技术方案 | 0.2d? | 2009-05-25 08:00 A | 2009-05-25 09:36 A | 38 | 100% | 2009-05-25 08:00 | 2009-05-25 09:36 | 0.2d? |  | 项目经理:马涛 | 1.6h | 1.6h |
| 41 | 5.2 | 概要设计 | 1d? | 2009-05-25 09:36 A | 2009-05-26 09:36 A | 40 | 100% | 2009-05-25 09:36 | 2009-05-26 09:36 | 1d? |  | 编码:任利维 | 8h | 8h |
| 42 | 5.3 | 概要设计评审 | 0.5d? | 2009-05-26 09:36 A | 2009-05-26 14:36 A | 41 | 100% | 2009-05-26 09:36 | 2009-05-26 14:36 | 0.5d? |  | 项目经理:马涛; 编码:任利维 | 8h | 8h |
| 43 | 5.4 | 详细设计 | 1d? | 2009-05-26 14:36 A | 2009-05-27 14:36 A | 42 | 100% | 2009-05-26 14:36 | 2009-05-27 14:36 | 1d? |  | 项目经理:马涛 | 8h | 8h |
| 44 | 5.5 | 详细设计评审 | 1d? | 2009-05-27 14:36 A | 2009-05-28 14:36 A | 43 | 100% | 2009-05-27 14:36 | 2009-05-28 14:36 | 1d? |  | 项目经理:马涛 | 8h | 8h |
| 45 | 5.6 | 设计基线化 | 0.5d? | 2009-05-30 13:00 A | 2009-05-30 17:00 A | 44 | 100% | 2009-05-30 13:00 | 2009-05-30 17:00 | 0.5d? | finish no earlier than 2009-05-30 17:00 | 项目经理:马涛 | 4h | 4h |
| 46 | 5.7 | 建立设计到需求的跟踪矩阵 | 0.5d? | 2009-05-30 08:00 A | 2009-05-30 12:00 A |  | 100% | 2009-05-30 08:00 | 2009-05-30 12:00 | 0.5d? | start no earlier than 2009-05-30 08:00 | 项目经理:马涛 | 4h | 4h |
| 47 | 6 | **编码与单元测试** | 8.5d? | 2009-06-01 08:00 A | 2009-06-10 12:00 A |  | 100% | 2009-06-01 08:00 | 2009-06-10 12:00 | 8.5d? |  |  | 104h | 104h |
| 48 | 6.1 | 1.选定开发平台、开发语言、开发工具 | 0.1d? | 2009-06-01 08:00 A | 2009-06-01 08:48 A | 46 | 100% | 2009-06-01 08:00 | 2009-06-01 08:48 | 0.1d? | start no earlier than 2009-06-01 08:00 | 编码:任利维 | 0.8h | 0.8h |
| 49 | 6.2 | 2.确定编程和应用的标准（可选） | 0.5d? | 2009-06-01 08:48 A | 2009-06-01 13:48 A | 48 | 100% | 2009-06-01 08:48 | 2009-06-01 13:48 | 0.5d? |  | 编码:任利维 | 4h | 4h |

| ID | WBS | Task | Type | Duration | Start | Finish | Predecessors | Complete | Baseline start | Baseline finish | Baseline duration | Constraint | Resources | Work | Actual work |
| --- | --- | --- | --- | --- | --- | --- | --- | --- | --- | --- | --- | --- | --- | --- | --- |
| 50 | 6.3 | **产品导览模块** |  | 3.9d? | 2009-06-01 13:48 A | 2009-06-05 12:00 A | 49 | 100% | 2009-06-01 13:48 | 2009-06-05 12:00 | 3.9d? |  |  | 34.4h | 34.4h |
| 51 | 6.3.1 | 3.编程 |  | 3d? | 2009-06-01 13:48 A | 2009-06-04 13:48 A |  | 100% | 2009-06-01 13:48 | 2009-06-04 13:48 | 3d? |  | 编码:任利维 | 24h | 24h |
| 52 | 6.3.2 | 4.进行代码走查（可选） | milestone | 0d? | 2009-06-01 13:48 A | 2009-06-01 13:48 A |  | 100% | 2009-06-01 13:48 | 2009-06-01 13:48 | 0d? |  | 编码:任利维 |  |  |
| 53 | 6.3.3 | 5.确定哪些代码做单元测试，哪些代码做正式代码审查 |  | 0.2d | 2009-06-01 13:48 A | 2009-06-01 15:24 A |  | 100% | 2009-06-01 13:48 | 2009-06-01 15:24 | 0.2d |  | 项目经理:马涛 | 1.6h | 1.6h |
| 54 | 6.3.4 | 6.组织正式代码审查 |  | 0.3d | 2009-06-01 15:24 A | 2009-06-02 08:48 A | 53 | 100% | 2009-06-01 15:24 | 2009-06-01 17:00 | 0.2d |  | 测试:刘俊 | 2.4h | 2.4h |
| 55 | 6.3.5 | 7、进行单元测试、完成模块测试报告 |  | 0.3d | 2009-06-04 09:36 A | 2009-06-04 12:00 A | 54 | 100% | 2009-06-04 09:36 | 2009-06-04 11:12 | 0.2d |  | 编码:任利维 | 2.4h | 2.4h |
| 56 | 6.3.6 | 8.修改代码并重新进行单元测试 |  | 0.5d | 2009-06-05 08:00 A | 2009-06-05 12:00 A |  | 100% | 2009-06-05 08:00 | 2009-06-05 12:00 | 0.5d | start no earlier than 2009-06-05 08:00 | 测试:刘俊 | 4h | 4h |
| 57 | 6.3.7 | 9.确定完成单元测试、及代码审查 |  | 0.5d? | 2009-06-05 08:00 A | 2009-06-05 12:00 A |  | 100% | 2009-06-05 08:00 | 2009-06-05 12:00 | 0.5d? | start no earlier than 2009-06-05 08:00 |  |  |  |
| 58 | 6.4 | **新闻发布模块** |  | 3.5d? | 2009-06-06 08:00 A | 2009-06-10 12:00 A |  | 100% | 2009-06-06 08:00 | 2009-06-10 12:00 | 3.5d? |  | 编码:季玉龙 | 64.8h | 64.8h |
| 59 | 6.4.1 | 3.编程 |  | 3d? | 2009-06-06 08:00 A | 2009-06-09 17:00 A |  | 100% | 2009-06-06 08:00 | 2009-06-09 17:00 | 3d? | start no earlier than 2009-06-06 08:00 | 编码:季玉龙 | 24h | 24h |
| 60 | 6.4.2 | 4.进行代码走查（可选） | milestone | 0d? | 2009-06-06 08:00 A | 2009-06-06 08:00 A |  | 100% | 2009-06-06 08:00 | 2009-06-06 08:00 | 0d? | start no earlier than 2009-06-06 08:00 | 编码:季玉龙 |  |  |
| 61 | 6.4.3 | 5.确定哪些代码做单元测试，哪些代码做正式代码审查 |  | 0.2d | 2009-06-09 08:00 A | 2009-06-09 09:36 A |  | 100% | 2009-06-09 08:00 | 2009-06-09 09:36 | 0.2d | start no earlier than 2009-06-09 08:00 | 编码:季玉龙 | 1.6h | 1.6h |
| 62 | 6.4.4 | 6.组织正式代码审查 |  | 0.2d | 2009-06-09 09:36 A | 2009-06-09 11:12 A | 61 | 100% | 2009-06-09 09:36 | 2009-06-09 11:12 | 0.2d |  | 项目经理:马涛 | 1.6h | 1.6h |
| 63 | 6.4.5 | 7、进行单元测试，完成模块测试报告 |  | 0.2d | 2009-06-09 13:48 A | 2009-06-09 15:24 A | 62 | 100% | 2009-06-09 13:48 | 2009-06-09 15:24 | 0.2d |  | 测试:刘俊 | 1.6h | 1.6h |
| 64 | 6.4.6 | 8.修改代码并重新进行单元测试 |  | 0.5d | 2009-06-10 08:00 A | 2009-06-10 12:00 A |  | 100% | 2009-06-10 08:00 | 2009-06-10 12:00 | 0.5d | start no earlier than 2009-06-10 08:00 | 编码:季玉龙 | 4h | 4h |
| 65 | 6.4.7 | 9.确定完成单元测试、及代码审查 |  | 0.5d? | 2009-06-10 08:00 A | 2009-06-10 12:00 A |  | 100% | 2009-06-10 08:00 | 2009-06-10 12:00 | 0.5d? | start no earlier than 2009-06-10 08:00 | 测试:刘俊 | 4h | 4h |
| 66 | 7 | **产品集成** |  | 0.93d? | 2009-06-11 08:00 A | 2009-06-11 16:28 A |  | 100% | 2009-06-11 08:00 | 2009-06-11 16:28 | 0.93d? |  |  | 22.4h | 22.4h |
| 67 | 7.1 | 1.确定将被集成的组件\接口 |  | 0.03d? | 2009-06-11 08:00 A | 2009-06-11 08:16 A |  | 100% | 2009-06-11 08:00 | 2009-06-11 08:16 | 0.03d? | start no earlier than 2009-06-11 08:00 | 编码:任利维; 编码:季玉龙; 设计:王帅 | 0.8h | 0.8h |
| 68 | 7.2 | 2.确定集成顺序 |  | 0.1d? | 2009-06-11 08:16 A | 2009-06-11 09:04 A | 67 | 100% | 2009-06-11 08:16 | 2009-06-11 09:04 | 0.1d? | start no earlier than 2009-06-11 08:00 | 编码:任利维; 编码:季玉龙; 设计:王帅 | 2.4h | 2.4h |
| 69 | 7.3 | 3.确定集成环境的需求 |  | 0.1d? | 2009-06-11 09:04 A | 2009-06-11 09:52 A | 68 | 100% | 2009-06-11 09:04 | 2009-06-11 09:52 | 0.1d? | start no earlier than 2009-06-11 08:00 | 编码:任利维; 编码:季玉龙; 设计:王帅 | 2.4h | 2.4h |
| 70 | 7.4 | 4.建立和维护集成规程 |  | 0.1d? | 2009-06-11 09:52 A | 2009-06-11 10:40 A | 69 | 100% | 2009-06-11 09:52 | 2009-06-11 10:40 | 0.1d? | start no earlier than 2009-06-11 08:00 | 编码:任利维; 编码:季玉龙; 设计:王帅 | 2.4h | 2.4h |
| 71 | 7.5 | 5.确保集成环境准备好 |  | 0.2d? | 2009-06-11 10:40 A | 2009-06-11 13:16 A | 70 | 100% | 2009-06-11 10:40 | 2009-06-11 13:16 | 0.2d? | start no earlier than 2009-06-11 08:00 | 编码:任利维; 编码:季玉龙; 设计:王帅 | 4.8h | 4.8h |
| 72 | 7.6 | 6.确保组件准备好集成 |  | 0.1d? | 2009-06-11 13:16 A | 2009-06-11 14:04 A | 71 | 100% | 2009-06-11 13:16 | 2009-06-11 14:04 | 0.1d? | start no earlier than 2009-06-11 08:00 | 编码:任利维; 编码:季玉龙; 设计:王帅 | 2.4h | 2.4h |
| 73 | 7.7 | 7.执行组件的集成 |  | 0.1d? | 2009-06-11 14:04 A | 2009-06-11 14:52 A | 72 | 100% | 2009-06-11 14:04 | 2009-06-11 14:52 | 0.1d? | start no earlier than 2009-06-11 08:00 | 编码:任利维; 编码:季玉龙; 设计:王帅 | 2.4h | 2.4h |
| 74 | 7.8 | 8.记录和跟踪集成中的问题/缺陷 |  | 0.2d? | 2009-06-11 14:52 A | 2009-06-11 16:28 A | 73 | 100% | 2009-06-11 14:52 | 2009-06-11 16:28 | 0.2d? | start no earlier than 2009-06-11 08:00 | 编码:任利维; 编码:季玉龙; 设计:王帅 | 4.8h | 4.8h |

| ID | WBS | Task | Duration | Start | Finish | Predecessors | Complete | Baseline start | Baseline finish | Baseline duration | Constraint | Resources | Work | Actual work |
| --- | --- | --- | --- | --- | --- | --- | --- | --- | --- | --- | --- | --- | --- | --- |
| 75 | 8 | **系统测试** | 2d? | 2009-06-11 16:28 A | 2009-06-13 16:28 A |  | 100% | 2009-06-11 16:28 | 2009-06-13 16:28 | 2d? |  |  | 16h | 16h |
| 76 | 8.1 | 准备测试计划、测试用例 | 0.5d? | 2009-06-11 16:28 A | 2009-06-12 11:28 A | 74 | 100% | 2009-06-11 16:28 | 2009-06-12 11:28 | 0.5d? |  | 测试:刘俊 | 4h | 4h |
| 77 | 8.2 | 组织评审 | 0.4d? | 2009-06-12 11:28 A | 2009-06-12 15:40 A | 76 | 100% | 2009-06-12 11:28 | 2009-06-12 15:40 | 0.4d? |  | 测试:刘俊 | 3.2h | 3.2h |
| 78 | 8.3 | 执行测试并记录BUG | 0.3d? | 2009-06-12 15:40 A | 2009-06-13 09:04 A | 77 | 100% | 2009-06-12 15:40 | 2009-06-13 09:04 | 0.3d? |  | 测试:刘俊 | 2.4h | 2.4h |
| 79 | 8.4 | BUG管理流程 | 0.2d? | 2009-06-13 09:04 A | 2009-06-13 10:40 A | 78 | 100% | 2009-06-13 09:04 | 2009-06-13 10:40 | 0.2d? | start no earlier than 2009-06-13 08:00 | 测试:刘俊 | 1.6h | 1.6h |
| 80 | 8.5 | 测试总结 | 0.3d? | 2009-06-13 10:40 A | 2009-06-13 14:04 A | 79 | 100% | 2009-06-13 10:40 | 2009-06-13 14:04 | 0.3d? | start no earlier than 2009-06-13 08:00 | 测试:刘俊 | 2.4h | 2.4h |
| 81 | 8.6 | 测试结果评审 | 0.3d? | 2009-06-13 14:04 A | 2009-06-13 16:28 A | 80 | 100% | 2009-06-13 14:04 | 2009-06-13 16:28 | 0.3d? | start no earlier than 2009-06-13 08:00 | 测试:刘俊 | 2.4h | 2.4h |
| 82 | 9 | **产品发布** | 1.1d? | 2009-06-13 16:28 A | 2009-06-16 08:16 A |  | 100% | 2009-06-13 16:28 | 2009-06-16 09:04 | 1.2d? |  |  | 17.6h | 17.6h |
| 83 | 9.1 | 确定发布内容 | 0.1d? | 2009-06-13 16:28 A | 2009-06-15 08:16 A | 81 | 100% | 2009-06-13 16:28 | 2009-06-15 08:16 | 0.1d? |  | 项目经理:马涛 | 0.8h | 0.8h |
| 84 | 9.2 | 建立产品发布基线 | 0.1d? | 2009-06-15 08:16 A | 2009-06-15 09:04 A | 83 | 100% | 2009-06-15 08:16 | 2009-06-15 09:04 | 0.1d? |  | 项目经理:马涛 | 0.8h | 0.8h |
| 85 | 9.3 | 进行发布审计 | 0.3d? | 2009-06-15 09:04 A | 2009-06-15 11:28 A | 84 | 100% | 2009-06-15 09:04 | 2009-06-15 11:28 | 0.3d? |  | 项目经理:马涛; PPQA:顾丽萍; PPQA:张磊; 编码:任利维 | 9.6h | 9.6h |
| 86 | 9.4 | 发布评审 | 0.1d? | 2009-06-15 11:28 A | 2009-06-15 13:16 A | 85 | 100% | 2009-06-15 11:28 | 2009-06-15 13:16 | 0.1d? |  | 项目经理:马涛; PPQA:顾丽萍; PPQA:张磊; 编码:任利维 | 3.2h | 3.2h |
| 87 | 9.5 | 制作软件安装包 | 0.1d? | 2009-06-15 13:16 A | 2009-06-15 14:04 A | 86 | 100% | 2009-06-15 13:16 | 2009-06-15 14:04 | 0.1d? |  | 编码:任利维 | 0.8h | 0.8h |
| 88 | 9.6 | 进行安装包的投产测试 | 0.1d? | 2009-06-15 14:04 A | 2009-06-15 14:52 A | 87 | 100% | 2009-06-15 14:04 | 2009-06-15 14:52 | 0.1d? |  |  |  |  |
| 89 | 9.7 | 进行发布 | 0.3d? | 2009-06-15 14:52 A | 2009-06-16 08:16 A | 88 | 100% | 2009-06-15 14:52 | 2009-06-16 08:16 | 0.3d? |  | 设计:王帅 | 2.4h | 2.4h |
| 90 | 10 | **项目关闭** | 0.6d | 2009-06-16 08:16 A | 2009-06-16 14:04 A |  | 100% | 2009-06-16 09:04 | 2009-06-16 14:52 | 0.6d |  |  | 4.8h | 4.8h |
| 91 | 10.1 | 项目总结 | 0.2d | 2009-06-16 08:16 A | 2009-06-16 09:52 A | 89 | 100% | 2009-06-16 09:04 | 2009-06-16 10:40 | 0.2d |  | 文档:李迎生 | 1.6h | 1.6h |
| 92 | 10.2 | 将项目数据提交到组织级数据库中 | 0.2d | 2009-06-16 09:52 A | 2009-06-16 11:28 A | 91 | 100% | 2009-06-16 10:40 | 2009-06-16 13:16 | 0.2d |  | 编码:季玉龙 | 1.6h | 1.6h |
| 93 | 10.3 | 关闭项目配置录 | 0.1d | 2009-06-16 11:28 A | 2009-06-16 13:16 A | 92 | 100% | 2009-06-16 13:16 | 2009-06-16 14:04 | 0.1d |  | 项目经理:马涛 | 0.8h | 0.8h |
| 94 | 10.4 | 总结会议 | 0.1d | 2009-06-16 13:16 A | 2009-06-16 14:04 A | 93 | 100% | 2009-06-16 14:04 | 2009-06-16 14:52 | 0.1d |  | 项目经理:马涛 | 0.8h | 0.8h |
