Schedule from MS Project, 2009-05-21 to 2009-09-08.

## Calendars

- 标准: Mon-Fri 08:00-12:00, 13:00-17:00; Sat-Sun off.

## Resources

| Resource |
| --- |
| 咨询师 |
| EPG |
| EPG/咨询师 |
| EPGL |
| EPG/QA |
| QA |
| 咨询师/ATM |
| EPG/咨询师/试点项目 |
| 咨询师/EPG |
| 咨询师/主任评估师/EPG/试点项目 |
| EPG/QA/咨询师 |
| EPGL/咨询师 |

## Schedule

| ID | WBS | Task | Duration | Start | Finish | Predecessors | Total slack | Constraint | Resources | Work |
| --- | --- | --- | --- | --- | --- | --- | --- | --- | --- | --- |
| 1 | 1 | **CMMI咨询项目** | 78.5d? | 2009-05-21 | 2009-09-08 |  | 0d |  |  | 652h |
| 2 | 1.1 | **启动会与过程域培训** | 11.5d? | 2009-05-21 | 2009-06-05 |  | 0d |  |  | 92h |
| 3 | 1.1.1 | 启动会与差距分析 | 2d | 2009-05-21 | 2009-05-22 |  | 0d | start no earlier than 2009-05-21 | 咨询师 | 16h |
| 4 | 1.1.2 | 过程域培训 | 0.5d | 2009-05-25 | 2009-05-25 | 3 | 0d |  | 咨询师 | 4h |
| 5 | 1.1.3 | 熟悉过程域内容 | 8d | 2009-05-25 | 2009-06-04 | 4 | 0d |  | EPG | 64h |
| 6 | 1.1.4 | 过程域培训 | 1d? | 2009-06-04 | 2009-06-05 | 5 | 0d |  | 咨询师 | 8h |
| 7 | 1.2 | **体系文档建立** | 22d | 2009-06-05 | 2009-07-07 |  | 0d |  |  | 176h |
| 8 | 1.2.1 | 制定体系文档草稿 | 6d | 2009-06-05 | 2009-06-15 | 6 | 0d |  | EPG | 48h |
| 9 | 1.2.2 | 内部评审体系文档(第一次) | 1d | 2009-06-15 | 2009-06-16 | 8 | 0d |  | EPG | 8h |
| 10 | 1.2.3 | 咨询师参与评审体系文档(第二次) | 2d | 2009-06-16 | 2009-06-18 | 9 | 0d |  | 咨询师 | 16h |
| 11 | 1.2.4 | 修改体系文档 | 7d | 2009-06-18 | 2009-06-29 | 10 | 0d |  | EPG | 56h |
| 12 | 1.2.5 | 内部评审体系文档(第三次) | 1d | 2009-06-29 | 2009-06-30 | 11 | 0d |  | EPG | 8h |
| 13 | 1.2.6 | 咨询师参与评审体系文档(第四次) | 2d | 2009-06-30 | 2009-07-02 | 12 | 0d |  | 咨询师 | 16h |
| 14 | 1.2.7 | 发布流程体系 | 1d | 2009-07-02 | 2009-07-03 | 13 | 0d |  | EPG | 8h |
| 15 | 1.2.8 | 制作内部培训材料 | 1d | 2009-07-03 | 2009-07-06 | 14 | 0d |  | EPG | 8h |
| 16 | 1.2.9 | 公司内部全员培训并考试 | 1d | 2009-07-06 | 2009-07-07 | 15 | 0d |  | EPG | 8h |
| 17 | 1.3 | **试运行及实施指导** | 28d | 2009-07-07 | 2009-08-14 |  | 0d |  |  | 224h |
| 18 | 1.3.1 | 选取试点项目 | 0.5d | 2009-07-07 | 2009-07-07 | 16 | 0d |  | EPG/咨询师 | 4h |
| 19 | 1.3.2 | 为试点项目指派QA | 0.5d | 2009-07-08 | 2009-07-08 | 18 | 0d |  | EPGL | 4h |
| 20 | 1.3.3 | EPG、QA指导试点项目运行 | 10d | 2009-07-08 | 2009-07-22 | 19 | 0d |  | EPG/QA/咨询师 | 80h |
| 21 | 1.3.4 | 实施指导、整理文档 | 2d | 2009-07-22 | 2009-07-24 | 20 | 0d |  | 咨询师 | 16h |
| 22 | 1.3.5 | 实施指导问题整改 | 15d | 2009-07-24 | 2009-08-14 | 21 | 0d |  | EPG/QA | 120h |
| 23 | 1.4 | **预评估** | 4d | 2009-08-14 | 2009-08-20 |  | 0d |  |  | 32h |
| 24 | 1.4.1 | **预评估准备** | 1d | 2009-08-14 | 2009-08-17 |  | 0d |  |  | 8h |
| 25 | 1.4.1.1 | 制定预评估计划 | 0.5d | 2009-08-14 | 2009-08-14 | 22 | 0d |  | 咨询师 | 4h |
| 26 | 1.4.1.2 | 培训PIIDS表 | 0.5d | 2009-08-17 | 2009-08-17 | 25 | 0d |  | 咨询师 | 4h |

| ID | WBS | Task | Duration | Start | Finish | Predecessors | Total slack | Resources | Work |
| --- | --- | --- | --- | --- | --- | --- | --- | --- | --- |
| 27 | 1.4.2 | **进行预评估** | 3d | 2009-08-17 | 2009-08-20 |  | 0d |  | 24h |
| 28 | 1.4.2.1 | 培训ATM成员评估方法 | 0.5d | 2009-08-17 | 2009-08-17 | 26 | 0d | 咨询师/ATM | 4h |
| 29 | 1.4.2.2 | 预评估启动会 | 0.2d | 2009-08-18 | 2009-08-18 | 28 | 0d | EPG/咨询师/试点项目 | 1.6h |
| 30 | 1.4.2.3 | 预评估访谈与审计文档 | 2d | 2009-08-18 | 2009-08-20 | 29 | 0d | EPG/咨询师/试点项目 | 16h |
| 31 | 1.4.2.4 | 预评估报告 | 0.3d | 2009-08-20 | 2009-08-20 | 30 | 0d | EPG/咨询师/试点项目 | 2.4h |
| 32 | 1.5 | **正式评估准备** | 6d | 2009-08-20 | 2009-08-28 |  | 0d | EPG | 72h |
| 33 | 1.5.1 | 针对预评估问题进行整改 | 3d | 2009-08-20 | 2009-08-25 | 31 | 0d |  |  |
| 34 | 1.5.2 | 制作PIIDS表及准备评估访谈 | 3d | 2009-08-25 | 2009-08-28 | 33 | 0d | EPG | 24h |
| 35 | 1.6 | **就绪检查** | 2d | 2009-08-28 | 2009-09-01 |  | 0d |  | 16h |
| 36 | 1.6.1 | 检查PIIDS表准备情况 | 1d | 2009-08-28 | 2009-08-31 | 34 | 0d | 咨询师 | 8h |
| 37 | 1.6.2 | 培训正式评估注意事项 | 1d | 2009-08-31 | 2009-09-01 | 36 | 0d | 咨询师 | 8h |
| 38 | 1.7 | **正式评估** | 5d | 2009-09-01 | 2009-09-08 |  | 0d |  | 40h |
| 39 | 1.7.1 | 正式评估 | 5d | 2009-09-01 | 2009-09-08 | 37 | 0d | 咨询师/主任评估师/EPG/试点项目 | 40h |
