Schedule from MS Project, 2009-06-01 to 2009-08-06, A marks actual dates.

## Calendars

- 标准: Mon-Fri 08:00-12:00, 13:00-17:00; Sat-Sun off. Exceptions (off unless hours are given): 2009-06-06 08:00-12:00, 13:00-17:00, 2009-06-13 08:00-12:00, 13:00-17:00, 2009-06-27 08:00-12:00, 13:00-17:00, 2009-07-04 08:00-12:00, 13:00-17:00, 2009-07-11 08:00-12:00, 13:00-17:00, 2009-07-18 08:00-12:00, 13:00-17:00, 2009-07-25 08:00-12:00, 13:00-17:00.

## Resources

| Resource |
| --- |
| 项目经理:马涛 |
| 需求:严静娟 |
| 设计:王帅 |
| 设计:张敏 |
| 编码:李迎生 |
| 编码:邓华山 |
| 编码:殷于良 |
| 测试:刘俊 |
| 测试:张达 |
| 测试:刘镇华 |
| 测试:侯长萍 |
| 文档:李迎生 |
| PPQA:顾丽萍 |
| PPQA:张磊 |
| 需求：邓华山 |

## Schedule

| ID | WBS | Task | Duration | Start | Finish | Predecessors | Complete | Baseline start | Baseline finish | Baseline duration | Constraint | Resources | Work | Actual work | Text1 |
| --- | --- | --- | --- | --- | --- | --- | --- | --- | --- | --- | --- | --- | --- | --- | --- |
| 1 | 1 | 项目名称：明伦公安智能网络办案考评系统 | 56d? | 2009-06-01 08:00 A | 2009-08-06 17:00 A |  | 100% |  |  |  | start no earlier than 2009-06-01 08:00 |  |  |  |  |
| 2 | 2 | **项目启动** | 1d? | 2009-06-01 08:00 A | 2009-06-01 17:00 A |  | 100% |  |  |  |  |  | 12.8h | 12.8h |  |
| 3 | 2.1 | 建立项目 | 0.1d | 2009-06-01 08:00 A | 2009-06-01 08:48 A |  | 100% |  |  |  | start no earlier than 2009-06-01 08:00 |  |  |  |  |
| 4 | 2.2 | 项目启动用具包移交 | 0.1d | 2009-06-01 08:48 A | 2009-06-01 09:36 A | 3 | 100% |  |  |  |  |  |  |  |  |
| 5 | 2.3 | 确认项目利益相关人、项目资源及关键的依赖关系 | 0.1d | 2009-06-01 09:36 A | 2009-06-01 10:24 A | 4 | 100% |  |  |  | start no earlier than 2009-05-20 08:00 | 项目经理:马涛 | 0.8h | 0.8h |  |
| 6 | 2.4 | 对项目进行可行性分析 | 0.2d | 2009-06-01 10:24 A | 2009-06-01 12:00 A | 5 | 100% |  |  |  | start no earlier than 2009-05-20 08:00 | 项目经理:马涛 | 1.6h | 1.6h |  |
| 7 | 2.5 | 对项目进行初始估算 | 0.2d | 2009-06-01 13:00 A | 2009-06-01 14:36 A | 6 | 100% |  |  |  | start no earlier than 2009-05-20 08:00 | 项目经理:马涛 | 1.6h | 1.6h |  |
| 8 | 2.6 | 准备项目任务书 | 0.1d | 2009-06-01 14:36 A | 2009-06-01 15:24 A | 7 | 100% |  |  |  | start no earlier than 2009-05-20 08:00 | 项目经理:马涛 | 0.8h | 0.8h |  |
| 9 | 2.7 | 召开项目启动会 | 0.2d? | 2009-06-01 15:24 A | 2009-06-01 17:00 A | 8 | 100% |  |  |  | start no earlier than 2009-05-21 08:00 | 文档:李迎生; 项目经理:马涛; 编码:李迎生; 编码:邓华山; 需求：邓华山 | 8h | 8h |  |
| 10 | 3 | **项目计划** | 1.25d? | 2009-06-02 08:00 A | 2009-06-03 10:00 A |  | 100% |  |  |  |  |  | 11.6h | 11.6h |  |
| 11 | 3.1 | 1、过程裁剪 | 0.1d? | 2009-06-02 08:00 A | 2009-06-02 08:48 A |  | 100% |  |  |  | start no earlier than 2009-06-02 08:00 | 项目经理:马涛 | 0.8h | 0.8h |  |
| 12 | 3.2 | 2、进行工作任务结构分解 | 0.1d? | 2009-06-02 08:48 A | 2009-06-02 09:36 A | 11 | 100% |  |  |  |  | 项目经理:马涛 | 0.8h | 0.8h |  |
| 13 | 3.3 | 3、详细估算 | 0.1d? | 2009-06-02 09:36 A | 2009-06-02 10:24 A | 12 | 100% |  |  |  |  | 项目经理:马涛 | 0.8h | 0.8h |  |
| 14 | 3.4 | 4、定义项目团队结构和项目接口 | 0.1d? | 2009-06-02 10:24 A | 2009-06-02 11:12 A | 13 | 100% |  |  |  |  | 项目经理:马涛 | 0.8h | 0.8h |  |
| 15 | 3.5 | 5、建立沟通计划 | 0.05d? | 2009-06-02 11:12 A | 2009-06-02 11:36 A | 14 | 100% |  |  |  |  | 项目经理:马涛 | 0.4h | 0.4h |  |
| 16 | 3.6 | 6、建立培训计划 | 0.05d? | 2009-06-02 11:36 A | 2009-06-02 12:00 A | 15 | 100% |  |  |  |  | 项目经理:马涛 | 0.4h | 0.4h |  |
| 17 | 3.7 | 7、管理转包工作 | 0.1d? | 2009-06-02 13:00 A | 2009-06-02 13:48 A | 16 | 100% |  |  |  |  | 项目经理:马涛 | 0.8h | 0.8h |  |
| 18 | 3.8 | 8、管理客户提供资料 | 0.1d? | 2009-06-02 13:48 A | 2009-06-02 14:36 A | 17 | 100% |  |  |  |  | 文档:李迎生 | 0.8h | 0.8h |  |
| 19 | 3.9 | 9、用户文档管理 | 0.1d? | 2009-06-02 14:36 A | 2009-06-02 15:24 A | 18 | 100% |  |  |  |  | 项目经理:马涛 | 0.8h | 0.8h |  |
| 20 | 3.10 | 10、定义变更管理机制、建立配置计划 | 0.1d? | 2009-06-02 15:24 A | 2009-06-02 16:12 A | 19 | 100% |  |  |  |  | 项目经理:马涛 | 0.8h | 0.8h |  |
| 21 | 3.11 | 11、建立问题管理机制 | 0.05d? | 2009-06-02 16:12 A | 2009-06-02 16:36 A | 20 | 100% |  |  |  |  | 项目经理:马涛 | 0.4h | 0.4h |  |
| 22 | 3.12 | 12、确保项目职责移交 | 0.05d? | 2009-06-02 16:36 A | 2009-06-02 17:00 A | 21 | 100% | 2006-01-25 08:00 | 2006-01-25 17:00 | 1d? |  | 项目经理:马涛 | 0.4h | 0.4h | 任务 |
| 23 | 3.13 | 13、建立项目跟踪机制 | 0.1d? | 2009-06-03 08:00 A | 2009-06-03 08:48 A | 22 | 100% | 2006-01-25 08:00 | 2006-01-25 17:00 | 1d? |  | 项目经理:马涛 | 0.8h | 0.8h | 任务 |
| 24 | 3.14 | 14、建立数据管理计划 | 0.05d? | 2009-06-03 08:48 A | 2009-06-03 09:12 A | 23 | 100% | 2006-01-25 08:00 | 2006-01-25 17:00 | 1d? |  | 编码:邓华山 | 0.4h | 0.4h | 任务 |
| 25 | 3.15 | 15、项目计划评审 | 0.1d? | 2009-06-03 09:12 A | 2009-06-03 10:00 A | 24 | 100% | 2006-01-25 08:00 | 2006-01-25 17:00 | 1d? |  | 项目经理:马涛; PPQA:顾丽萍; PPQA:张磊 | 2.4h | 2.4h | 任务 |

| ID | WBS | Task | Duration | Start | Finish | Predecessors | Complete | Constraint | Resources | Work | Actual work |
| --- | --- | --- | --- | --- | --- | --- | --- | --- | --- | --- | --- |
| 26 | 4 | **需求与分析** | 4d? | 2009-06-03 08:00 A | 2009-06-06 17:00 A |  | 100% |  |  | 32.8h | 32.8h |
| 27 | 4.1 | 1、提出业务需求 | 0.1d? | 2009-06-03 08:00 A | 2009-06-03 08:48 A |  | 100% | start no earlier than 2009-06-03 08:00 | 需求：邓华山 | 0.8h | 0.8h |
| 28 | 4.2 | 2、与客户业务人员进行需求初步沟通 | 0.1d? | 2009-06-03 08:48 A | 2009-06-03 09:36 A | 27 | 100% |  | 需求：邓华山 | 0.8h | 0.8h |
| 29 | 4.3 | 3.与相关开发人员进行需求初步沟通 | 0.2d? | 2009-06-03 09:36 A | 2009-06-03 11:12 A | 28 | 100% |  | 项目经理:马涛 | 1.6h | 1.6h |
| 30 | 4.4 | 4.进行需求影响分析 | 0.5d? | 2009-06-03 11:12 A | 2009-06-03 16:12 A | 29 | 100% |  | 文档:李迎生 | 4h | 4h |
| 31 | 4.5 | 5.形成业务需求回复意见 | 0.1d? | 2009-06-03 16:12 A | 2009-06-03 17:00 A | 30 | 100% |  |  |  |  |
| 32 | 4.6 | 6.进行需求讨论 | 0.5d? | 2009-06-04 08:00 A | 2009-06-04 12:00 A | 31 | 100% |  | 文档:李迎生 | 4h | 4h |
| 33 | 4.7 | 7.生成业务需求 | 0.5d? | 2009-06-04 13:00 A | 2009-06-04 17:00 A | 32 | 100% |  | 文档:李迎生 | 4h | 4h |
| 34 | 4.8 | 8.生成产品需求 | 1d? | 2009-06-05 08:00 A | 2009-06-05 17:00 A | 33 | 100% |  | 文档:李迎生 | 8h | 8h |
| 35 | 4.9 | 9.批准定版需求，确保制定需求跟踪矩阵 | 0.1d? | 2009-06-06 08:00 A | 2009-06-06 08:48 A | 34 | 100% |  | 项目经理:马涛 | 0.8h | 0.8h |
| 36 | 4.10 | 10.进行需求开发 | 0.2d? | 2009-06-06 08:48 A | 2009-06-06 10:24 A | 35 | 100% |  | 需求：邓华山; 文档:李迎生 | 3.2h | 3.2h |
| 37 | 4.11 | 11.组织需求技术评审 | 0.2d? | 2009-06-06 10:24 A | 2009-06-06 12:00 A | 36 | 100% |  | 项目经理:马涛 | 1.6h | 1.6h |
| 38 | 4.12 | 12.批准产品需求规格书，确保更新产品需求规格书 | 0.3d? | 2009-06-06 13:00 A | 2009-06-06 15:24 A | 37 | 100% |  | 项目经理:马涛 | 2.4h | 2.4h |
| 39 | 4.13 | 13.建立需求基线 | 0.2d? | 2009-06-06 15:24 A | 2009-06-06 17:00 A | 38 | 100% |  | 项目经理:马涛 | 1.6h | 1.6h |
| 40 | 5 | **分析与设计** | 6d? | 2009-06-08 08:00 A | 2009-06-13 17:00 A |  | 100% |  |  | 44h | 44h |
| 41 | 5.1 | 选择技术方案 | 0.5d? | 2009-06-08 08:00 A | 2009-06-08 12:00 A | 39 | 100% |  | 项目经理:马涛 | 4h | 4h |
| 42 | 5.2 | 概要设计 | 1d? | 2009-06-08 13:00 A | 2009-06-09 12:00 A | 41 | 100% |  | 编码:邓华山 | 8h | 8h |
| 43 | 5.3 | 概要设计评审 | 0.5d? | 2009-06-09 13:00 A | 2009-06-09 17:00 A | 42 | 100% |  | 项目经理:马涛; 编码:邓华山 | 8h | 8h |
| 44 | 5.4 | 数据库设计 | 1d? | 2009-06-10 08:00 A | 2009-06-10 17:00 A | 43 | 100% |  |  |  |  |
| 45 | 5.5 | 详细设计 | 1d? | 2009-06-11 08:00 A | 2009-06-11 17:00 A | 44 | 100% |  | 项目经理:马涛 | 8h | 8h |
| 46 | 5.6 | 详细设计评审 | 0.5d? | 2009-06-12 08:00 A | 2009-06-12 12:00 A | 45 | 100% |  | 项目经理:马涛 | 4h | 4h |
| 47 | 5.7 | 设计基线化 | 0.5d? | 2009-06-12 13:00 A | 2009-06-12 17:00 A | 46 | 100% | finish no earlier than 2009-05-30 17:00 | 项目经理:马涛 | 4h | 4h |
| 48 | 5.8 | 建立设计到需求的跟踪矩阵 | 1d? | 2009-06-13 08:00 A | 2009-06-13 17:00 A | 47 | 100% |  | 项目经理:马涛 | 8h | 8h |
| 49 | 6 | **编码与单元测试** | 23d? | 2009-06-15 08:00 A | 2009-07-11 17:00 A |  | 100% |  |  | 400.8h | 400.8h |
| 50 | 6.1 | 1.选定开发平台、开发语言、开发工具 | 0.1d? | 2009-06-15 08:00 A | 2009-06-15 08:48 A | 48 | 100% | start no earlier than 2009-06-01 08:00 | 项目经理:马涛 | 0.8h | 0.8h |
| 51 | 6.2 | 2.确定编程和应用的标准（可选） | 0.5d? | 2009-06-15 08:48 A | 2009-06-15 13:48 A | 50 | 100% |  | 项目经理:马涛 | 4h | 4h |

| ID | WBS | Task | Type | Duration | Start | Finish | Predecessors | Complete | Constraint | Resources | Work | Actual work |
| --- | --- | --- | --- | --- | --- | --- | --- | --- | --- | --- | --- | --- |
| 52 | 6.3 | **接警模块** |  | 2d? | 2009-06-15 13:48 A | 2009-06-17 13:48 A | 51 | 100% |  |  | 24.8h | 24.8h |
| 53 | 6.3.1 | 3.编程 |  | 2d? | 2009-06-15 13:48 A | 2009-06-17 13:48 A |  | 100% |  | 编码:李迎生 | 16h | 16h |
| 54 | 6.3.2 | 4.进行代码走查（可选） | milestone | 0d? | 2009-06-15 13:48 A | 2009-06-15 13:48 A |  | 100% |  | 编码:李迎生 |  |  |
| 55 | 6.3.3 | 5.确定哪些代码做单元测试，哪些代码做正式代码审查 |  | 0.2d | 2009-06-15 13:48 A | 2009-06-15 15:24 A |  | 100% |  | 项目经理:马涛 | 1.6h | 1.6h |
| 56 | 6.3.4 | 6.组织正式代码审查 |  | 0.2d | 2009-06-15 15:24 A | 2009-06-15 17:00 A | 55 | 100% |  | 测试:刘俊 | 1.6h | 1.6h |
| 57 | 6.3.5 | 7、进行单元测试 |  | 0.2d | 2009-06-16 08:00 A | 2009-06-16 09:36 A | 56 | 100% |  | 编码:李迎生 | 1.6h | 1.6h |
| 58 | 6.3.6 | 8.修改代码并重新进行单元测试 |  | 0.5d | 2009-06-16 08:00 A | 2009-06-16 12:00 A |  | 100% | start no earlier than 2009-06-16 08:00 | 测试:刘俊 | 4h | 4h |
| 59 | 6.3.7 | 9.确定完成单元测试、及代码审查 |  | 0.5d? | 2009-06-16 08:00 A | 2009-06-16 12:00 A |  | 100% | start no earlier than 2009-06-16 08:00 |  |  |  |
| 60 | 6.4 | **行政案件管理模块** |  | 5d? | 2009-06-17 08:00 A | 2009-06-23 17:00 A |  | 100% |  | 编码:李迎生 | 88h | 88h |
| 61 | 6.4.1 | 3.编程 |  | 4d? | 2009-06-17 08:00 A | 2009-06-22 17:00 A |  | 100% | finish no earlier than 2009-06-22 17:00 | 编码:李迎生 | 32h | 32h |
| 62 | 6.4.2 | 4.进行代码走查（可选） | milestone | 0d? | 2009-06-17 08:00 A | 2009-06-17 08:00 A |  | 100% | start no earlier than 2009-06-17 08:00 | 编码:李迎生 |  |  |
| 63 | 6.4.3 | 5.确定哪些代码做单元测试，哪些代码做正式代码审查 |  | 0.2d | 2009-06-22 08:00 A | 2009-06-22 09:36 A | 62 | 100% | start no earlier than 2009-06-22 08:00 | 编码:李迎生 | 1.6h | 1.6h |
| 64 | 6.4.4 | 6.组织正式代码审查 |  | 0.2d | 2009-06-22 09:36 A | 2009-06-22 11:12 A | 63 | 100% |  | 项目经理:马涛 | 1.6h | 1.6h |
| 65 | 6.4.5 | 7、进行单元测试 |  | 0.4d | 2009-06-22 11:12 A | 2009-06-22 15:24 A | 64 | 100% |  | 测试:刘俊 | 3.2h | 3.2h |
| 66 | 6.4.6 | 8.修改代码并重新进行单元测试 |  | 1d? | 2009-06-23 08:00 A | 2009-06-23 17:00 A | 61 | 100% |  | 编码:李迎生 | 8h | 8h |
| 67 | 6.4.7 | 9.确定完成单元测试、及代码审查 |  | 0.2d? | 2009-06-23 08:00 A | 2009-06-23 09:36 A |  | 100% | start no earlier than 2009-06-23 08:00 | 编码:李迎生 | 1.6h | 1.6h |
| 68 | 6.5 | **刑事案件管理模块** |  | 6d? | 2009-06-24 08:00 A | 2009-06-30 17:00 A |  | 100% |  | 编码:李迎生 | 104h | 104h |
| 69 | 6.5.1 | 3.编程 |  | 4d? | 2009-06-24 08:00 A | 2009-06-27 17:00 A |  | 100% | start no earlier than 2009-06-24 08:00 | 编码:邓华山 | 32h | 32h |
| 70 | 6.5.2 | 4.进行代码走查（可选） | milestone | 0d? | 2009-06-24 08:00 A | 2009-06-24 08:00 A |  | 100% | start no earlier than 2009-06-24 08:00 | 编码:邓华山 |  |  |
| 71 | 6.5.3 | 5.确定哪些代码做单元测试，哪些代码做正式代码审查 |  | 0.2d | 2009-06-27 08:00 A | 2009-06-27 09:36 A | 70 | 100% | start no earlier than 2009-06-27 08:00 | 编码:邓华山 | 1.6h | 1.6h |
| 72 | 6.5.4 | 6.组织正式代码审查 |  | 0.2d | 2009-06-27 09:36 A | 2009-06-27 11:12 A | 71 | 100% |  | 项目经理:马涛 | 1.6h | 1.6h |
| 73 | 6.5.5 | 7、进行单元测试 |  | 0.4d | 2009-06-27 08:00 A | 2009-06-27 11:12 A |  | 100% | start no earlier than 2009-06-27 08:00 | 测试:刘镇华 | 3.2h | 3.2h |
| 74 | 6.5.6 | 8.修改代码并重新进行单元测试 |  | 2d | 2009-06-29 08:00 A | 2009-06-30 17:00 A |  | 100% | finish no earlier than 2009-06-30 17:00 | 编码:邓华山 | 16h | 16h |
| 75 | 6.5.7 | 9.确定完成单元测试、及代码审查 |  | 0.2d? | 2009-06-30 08:00 A | 2009-06-30 09:36 A |  | 100% | start no earlier than 2009-06-30 08:00 | 测试:刘镇华 | 1.6h | 1.6h |

| ID | WBS | Task | Type | Duration | Start | Finish | Predecessors | Complete | Constraint | Resources | Work | Actual work |
| --- | --- | --- | --- | --- | --- | --- | --- | --- | --- | --- | --- | --- |
| 76 | 6.6 | **考评、审批、办公管理模块** |  | 4d? | 2009-07-01 08:00 A | 2009-07-04 17:00 A |  | 100% |  | 编码:李迎生 | 74.4h | 74.4h |
| 77 | 6.6.1 | 3.编程 |  | 3d? | 2009-07-01 08:00 A | 2009-07-03 17:00 A |  | 100% | finish no earlier than 2009-07-03 17:00 | 编码:邓华山 | 24h | 24h |
| 78 | 6.6.2 | 4.进行代码走查（可选） | milestone | 0d? | 2009-07-03 08:00 A | 2009-07-03 08:00 A |  | 100% | start no earlier than 2009-07-03 08:00 | 编码:邓华山 |  |  |
| 79 | 6.6.3 | 5.确定哪些代码做单元测试，哪些代码做正式代码审查 |  | 0.2d | 2009-07-03 08:00 A | 2009-07-03 09:36 A | 78 | 100% |  | 编码:邓华山 | 1.6h | 1.6h |
| 80 | 6.6.4 | 6.组织正式代码审查 |  | 0.2d | 2009-07-03 09:36 A | 2009-07-03 11:12 A | 79 | 100% |  | 项目经理:马涛 | 1.6h | 1.6h |
| 81 | 6.6.5 | 7、进行单元测试 |  | 0.4d | 2009-07-03 11:12 A | 2009-07-03 15:24 A | 80 | 100% |  | 测试:刘镇华 | 3.2h | 3.2h |
| 82 | 6.6.6 | 8.修改代码并重新进行单元测试 |  | 1d | 2009-07-04 08:00 A | 2009-07-04 17:00 A |  | 100% | start no earlier than 2009-07-04 08:00 | 编码:李迎生 | 8h | 8h |
| 83 | 6.6.7 | 9.确定完成单元测试、及代码审查 |  | 0.5d? | 2009-07-03 15:24 A | 2009-07-04 10:24 A | 81 | 100% |  | 测试:刘镇华 | 4h | 4h |
| 84 | 6.7 | **系统管理模块** |  | 3.5d? | 2009-07-06 08:00 A | 2009-07-09 12:00 A |  | 100% |  | 编码:李迎生 | 66.4h | 66.4h |
| 85 | 6.7.1 | 3.编程 |  | 3d? | 2009-07-06 08:00 A | 2009-07-08 17:00 A |  | 100% | start no earlier than 2009-07-06 08:00 | 编码:李迎生 | 24h | 24h |
| 86 | 6.7.2 | 4.进行代码走查（可选） | milestone | 0d? | 2009-07-06 08:00 A | 2009-07-06 08:00 A |  | 100% | start no earlier than 2009-07-06 08:00 | 编码:李迎生 |  |  |
| 87 | 6.7.3 | 5.确定哪些代码做单元测试，哪些代码做正式代码审查 |  | 0.2d | 2009-07-08 08:00 A | 2009-07-08 09:36 A |  | 100% | start no earlier than 2009-07-08 08:00 | 编码:李迎生 | 1.6h | 1.6h |
| 88 | 6.7.4 | 6.组织正式代码审查 |  | 0.2d | 2009-07-08 09:36 A | 2009-07-08 11:12 A | 87 | 100% |  | 项目经理:马涛 | 1.6h | 1.6h |
| 89 | 6.7.5 | 7、进行单元测试 |  | 0.4d | 2009-07-08 11:12 A | 2009-07-08 15:24 A | 88 | 100% |  | 测试:刘俊 | 3.2h | 3.2h |
| 90 | 6.7.6 | 8.修改代码并重新进行单元测试 |  | 0.5d | 2009-07-08 15:24 A | 2009-07-09 10:24 A | 89 | 100% |  | 编码:李迎生 | 4h | 4h |
| 91 | 6.7.7 | 9.确定完成单元测试、及代码审查 |  | 0.5d? | 2009-07-09 08:00 A | 2009-07-09 12:00 A | 85 | 100% |  | 测试:刘俊 | 4h | 4h |
| 92 | 6.8 | **帮助、工具管理模块** |  | 2d? | 2009-07-10 08:00 A | 2009-07-11 17:00 A |  | 100% |  | 编码:李迎生 | 38.4h | 38.4h |
| 93 | 6.8.1 | 3.编程 |  | 1d? | 2009-07-11 08:00 A | 2009-07-11 17:00 A |  | 100% | finish no earlier than 2009-07-11 17:00 | 编码:李迎生 | 8h | 8h |
| 94 | 6.8.2 | 4.进行代码走查（可选） | milestone | 0d? | 2009-07-10 08:00 A | 2009-07-10 08:00 A |  | 100% | start no earlier than 2009-07-10 08:00 | 编码:李迎生 |  |  |
| 95 | 6.8.3 | 5.确定哪些代码做单元测试，哪些代码做正式代码审查 |  | 0.2d | 2009-07-10 08:00 A | 2009-07-10 09:36 A | 94 | 100% |  | 编码:李迎生 | 1.6h | 1.6h |
| 96 | 6.8.4 | 6.组织正式代码审查 |  | 0.2d | 2009-07-10 09:36 A | 2009-07-10 11:12 A | 95 | 100% |  | 项目经理:马涛 | 1.6h | 1.6h |
| 97 | 6.8.5 | 7、进行单元测试 |  | 0.4d | 2009-07-10 11:12 A | 2009-07-10 15:24 A | 96 | 100% |  | 测试:刘俊 | 3.2h | 3.2h |
| 98 | 6.8.6 | 8.修改代码并重新进行单元测试 |  | 0.5d | 2009-07-10 15:24 A | 2009-07-11 10:24 A | 97 | 100% |  | 编码:李迎生 | 4h | 4h |
| 99 | 6.8.7 | 9.确定完成单元测试、及代码审查 |  | 0.5d? | 2009-07-11 08:00 A | 2009-07-11 12:00 A |  | 100% | start no earlier than 2009-07-11 08:00 | 测试:刘俊 | 4h | 4h |

| ID | WBS | Task | Duration | Start | Finish | Predecessors | Complete | Constraint | Resources | Work | Actual work |
| --- | --- | --- | --- | --- | --- | --- | --- | --- | --- | --- | --- |
| 100 | 7 | **产品集成** | 3.8d? | 2009-07-13 08:00 A | 2009-07-16 15:24 A |  | 100% |  |  | 65.6h | 65.6h |
| 101 | 7.1 | 1.确定将被集成的组件\接口 | 0.3d? | 2009-07-13 14:36 A | 2009-07-13 17:00 A |  | 100% | finish no earlier than 2009-07-13 17:00 | 编码:邓华山; 编码:李迎生 | 4.8h | 4.8h |
| 102 | 7.2 | 2.确定集成顺序 | 0.45d? | 2009-07-13 08:00 A | 2009-07-13 11:36 A |  | 100% | start no earlier than 2009-07-13 08:00 | 编码:邓华山; 编码:李迎生 | 7.2h | 7.2h |
| 103 | 7.3 | 3.确定集成环境的需求 | 0.15d? | 2009-07-13 11:36 A | 2009-07-13 13:48 A | 102 | 100% | start no earlier than 2009-06-11 08:00 | 编码:邓华山; 编码:李迎生 | 2.4h | 2.4h |
| 104 | 7.4 | 4.建立和维护集成规程 | 0.15d? | 2009-07-13 13:48 A | 2009-07-13 15:00 A | 103 | 100% | start no earlier than 2009-06-11 08:00 | 编码:邓华山; 编码:李迎生 | 2.4h | 2.4h |
| 105 | 7.5 | 5.确保集成环境准备好 | 0.3d? | 2009-07-13 15:00 A | 2009-07-14 08:24 A | 104 | 100% | start no earlier than 2009-06-11 08:00 | 编码:邓华山; 编码:李迎生 | 4.8h | 4.8h |
| 106 | 7.6 | 6.确保组件准备好集成 | 0.5d? | 2009-07-14 08:24 A | 2009-07-14 13:24 A | 105 | 100% | start no earlier than 2009-07-14 08:00 | 编码:邓华山; 编码:李迎生 | 8h | 8h |
| 107 | 7.7 | 7.执行组件的集成 | 0.75d | 2009-07-14 13:24 A | 2009-07-15 10:24 A | 106 | 100% | start no earlier than 2009-06-11 08:00 | 编码:邓华山; 编码:李迎生 | 12h | 12h |
| 108 | 7.8 | 8.记录和跟踪集成中的问题/缺陷 | 1.5d | 2009-07-15 10:24 A | 2009-07-16 15:24 A | 107 | 100% | start no earlier than 2009-07-15 08:00 | 编码:邓华山; 编码:李迎生 | 24h | 24h |
| 109 | 8 | **系统测试** | 10.2d? | 2009-07-16 15:24 A | 2009-07-28 17:00 A |  | 100% |  |  | 83.2h | 83.2h |
| 110 | 8.1 | 准备测试计划、测试用例 | 1d | 2009-07-16 15:24 A | 2009-07-17 15:24 A | 108 | 100% |  | 测试:刘俊; 测试:刘镇华 | 16h | 16h |
| 111 | 8.2 | 组织评审 | 0.2d? | 2009-07-18 08:00 A | 2009-07-18 09:36 A | 110 | 100% | start no earlier than 2009-07-18 08:00 | 测试:刘俊; 测试:刘镇华 | 3.2h | 3.2h |
| 112 | 8.3 | 执行测试并记录BUG | 2d | 2009-07-18 09:36 A | 2009-07-21 09:36 A | 111 | 100% |  | 测试:刘俊; 测试:刘镇华 | 32h | 32h |
| 113 | 8.4 | BUG管理流程 | 1d | 2009-07-21 09:36 A | 2009-07-22 09:36 A | 112 | 100% | start no earlier than 2009-06-13 08:00 | 测试:刘俊; 测试:刘镇华 | 16h | 16h |
| 114 | 8.5 | 测试总结 | 0.5d | 2009-07-25 08:00 A | 2009-07-25 12:00 A | 113 | 100% | start no earlier than 2009-07-25 08:00 | 测试:刘俊; 测试:刘镇华 | 8h | 8h |
| 115 | 8.6 | 测试结果评审 | 0.5d | 2009-07-28 13:00 A | 2009-07-28 17:00 A | 114 | 100% | finish no earlier than 2009-07-28 17:00 | 测试:刘俊; 测试:刘镇华 | 8h | 8h |
| 116 | 9 | **产品发布** | 1.3d? | 2009-07-29 08:00 A | 2009-07-30 10:24 A |  | 100% |  |  | 19.2h | 19.2h |
| 117 | 9.1 | 确定发布内容 | 0.1d? | 2009-07-29 08:00 A | 2009-07-29 08:48 A | 115 | 100% |  | 项目经理:马涛 | 0.8h | 0.8h |
| 118 | 9.2 | 建立产品发布基线 | 0.1d? | 2009-07-29 08:48 A | 2009-07-29 09:36 A | 117 | 100% |  | 项目经理:马涛 | 0.8h | 0.8h |
| 119 | 9.3 | 进行发布审计 | 0.3d? | 2009-07-29 09:36 A | 2009-07-29 12:00 A | 118 | 100% |  | 项目经理:马涛; PPQA:顾丽萍; PPQA:张磊; 编码:邓华山 | 9.6h | 9.6h |
| 120 | 9.4 | 发布评审 | 0.1d? | 2009-07-29 13:00 A | 2009-07-29 13:48 A | 119 | 100% |  | 项目经理:马涛; PPQA:顾丽萍; PPQA:张磊; 编码:邓华山 | 3.2h | 3.2h |
| 121 | 9.5 | 制作软件安装包 | 0.3d | 2009-07-29 13:48 A | 2009-07-29 16:12 A | 120 | 100% |  | 编码:邓华山 | 2.4h | 2.4h |
| 122 | 9.6 | 进行安装包的投产测试 | 0.1d? | 2009-07-29 16:12 A | 2009-07-29 17:00 A | 121 | 100% |  |  |  |  |
| 123 | 9.7 | 进行发布 | 0.3d? | 2009-07-30 08:00 A | 2009-07-30 10:24 A | 122 | 100% |  | 项目经理:马涛 | 2.4h | 2.4h |

| ID | WBS | Task | Duration | Start | Finish | Predecessors | Complete | Constraint | Resources | Work | Actual work |
| --- | --- | --- | --- | --- | --- | --- | --- | --- | --- | --- | --- |
| 124 | 10 | **项目关闭** | 0.8d | 2009-07-31 08:00 A | 2009-07-31 15:24 A |  | 100% |  |  | 31.2h | 31.2h |
| 125 | 10.1 | 项目总结 | 0.4d | 2009-07-31 08:00 A | 2009-07-31 11:12 A | 123 | 100% | start no earlier than 2009-07-31 08:00 | 项目经理:马涛; 需求：邓华山; 测试:刘镇华; 编码:李迎生; 编码:邓华山; 测试:刘俊 | 19.2h | 19.2h |
| 126 | 10.2 | 将项目数据提交到组织级数据库中 | 0.1d | 2009-07-31 11:12 A | 2009-07-31 12:00 A | 125 | 100% |  | 编码:李迎生; 编码:邓华山 | 1.6h | 1.6h |
| 127 | 10.3 | 关闭项目配置录 | 0.1d | 2009-07-31 13:00 A | 2009-07-31 13:48 A | 126 | 100% |  | 项目经理:马涛 | 0.8h | 0.8h |
| 128 | 10.4 | 总结会议 | 0.2d | 2009-07-31 13:48 A | 2009-07-31 15:24 A | 127 | 100% |  | 项目经理:马涛; 需求：邓华山; 测试:刘镇华; 编码:李迎生; 编码:邓华山; 测试:刘俊 | 9.6h | 9.6h |
